# Cronograma SISPPAFUT

How a schedule from MS Project changed from version to version. A marks actual dates.

## Version 1 (saved 2012-03-20)

Note of the change: Cronograma de trabajo del proyecto SISPPAFUT

| ID | WBS | Task | Duration | Start | Finish | Predecessors | Total float | Constraint |
| --- | --- | --- | --- | --- | --- | --- | --- | --- |
| 1 | 1 | **Sistema Inteligente para Pronósticos de Partidos de Fútbol** | 84d | 2012-03-19 09:00 | 2012-11-30 19:00 |  | 0d |  |
| 2 | 1.1 | **Planificación** | 1d | 2012-03-19 09:00 | 2012-03-19 19:00 |  | 2d |  |
| 3 |  | Elaboraración del Glosario | 1d | 2012-03-19 09:00 | 2012-03-19 19:00 |  | 2d |  |
| 4 | 1.2 | **Product Backlog** | 1d | 2012-03-22 09:00 | 2012-03-22 19:00 |  | 2d |  |
| 5 |  | Creación de User Stories | 0.5d | 2012-03-22 09:00 | 2012-03-22 13:00 | 3 | 2d | start no earlier than 2012-03-22 09:00 |
| 6 |  | Priorización de User Stories | 0.5d | 2012-03-22 15:00 | 2012-03-22 19:00 | 5 | 2d | start no earlier than 2012-03-22 09:00 |
| 7 | 1.3 | **Planificación de los Sprints** | 2d | 2012-03-23 09:00 | 2012-03-26 19:00 |  | 2d |  |
| 8 |  | Determinar Sprints | 0.5d | 2012-03-23 09:00 | 2012-03-23 13:00 | 6 | 2d |  |
| 9 |  | Determinar los Sprints Backlog | 0.5d | 2012-03-23 15:00 | 2012-03-23 19:00 | 8 | 2d |  |
| 10 |  | Determinar duración de cada Sprint | 0.5d | 2012-03-26 09:00 | 2012-03-26 13:00 | 9 | 2d |  |
| 11 |  | Determinar Releases | 0.5d | 2012-03-26 15:00 | 2012-03-26 19:00 | 10 | 2d |  |
| 12 | 1.4 | **Diseño de la Red Neuronal** | 1.5d | 2012-03-29 09:00 | 2012-03-30 13:00 |  | 78.5d |  |
| 13 |  | Análisis de las características | 0.5d | 2012-03-29 09:00 | 2012-03-29 13:00 | 11 | 78.5d | start no earlier than 2012-03-29 09:00 |
| 14 |  | Análisis de los patrones | 0.5d | 2012-03-29 15:00 | 2012-03-29 19:00 | 13 | 78.5d |  |
| 15 |  | Diseño de la RNA | 0.5d | 2012-03-30 09:00 | 2012-03-30 13:00 | 14 | 78.5d |  |
| 16 | 1.5 | **Construcción** | 33d | 2012-03-29 09:00 | 2012-06-18 19:00 |  | 2d |  |
| 17 |  | Sprint 1 | 11d | 2012-03-29 09:00 | 2012-04-20 19:00 | 11 | 2d | start no earlier than 2012-03-29 09:00 |
| 18 |  | Sprint 2 | 11d | 2012-04-23 09:00 | 2012-05-24 19:00 | 17 | 2d |  |
| 19 |  | Sprint 3 | 11d | 2012-05-25 09:00 | 2012-06-18 19:00 | 18 | 2d |  |
| 20 |  | Lanzamiento de Release 1 | 1d | 2012-06-21 09:00 | 2012-06-21 19:00 | 19 | 2d |  |
| 21 |  | Cierre parcial del Producto | 1d | 2012-06-22 09:00 | 2012-06-22 19:00 | 20 | 2d |  |
| 22 |  | Presentación Parcial del Taller de Proyecto 1 | 1d | 2012-06-25 09:00 | 2012-06-25 19:00 | 21 | 2d |  |
| 23 | 1.9 | **Contrucción** | 27d | 2012-08-20 09:00 | 2012-10-26 19:00 |  | 0d |  |
| 24 |  | Sprint 4 | 9d | 2012-08-20 09:00 | 2012-09-07 19:00 | 22 | 0d | start no earlier than 2012-08-20 09:00 |
| 25 |  | Sprint 5 | 9d | 2012-09-10 09:00 | 2012-09-28 19:00 | 24 | 0d |  |
| 26 |  | Sprint 6 | 9d | 2012-10-01 09:00 | 2012-10-26 19:00 | 25 | 0d |  |
| 27 | 1.10 | **Entrenamiento** | 11d | 2012-10-29 09:00 | 2012-11-22 19:00 |  | 0d |  |
| 28 |  | Implementación del módulo de entrenamiento | 2d | 2012-10-29 09:00 | 2012-11-01 19:00 | 26 | 0d |  |
| 29 |  | Entrenamiento del Sistema | 9d | 2012-11-02 09:00 | 2012-11-22 19:00 | 28 | 0d |  |
| 30 | 1.11 | **Pruebas de Sistemas Expertos** | 1d | 2012-11-23 09:00 | 2012-11-23 19:00 |  | 0d |  |
| 31 |  | Validación y verificación de Sistemas Expertos | 1d | 2012-11-23 09:00 | 2012-11-23 19:00 | 29 | 0d |  |
| 32 |  | Lanzamiento de Release 2 | 1d | 2012-11-26 09:00 | 2012-11-26 19:00 | 31 | 0d |  |
| 33 |  | Cierre final del Producto | 1d | 2012-11-29 09:00 | 2012-11-29 19:00 | 32 | 0d |  |
| 34 |  | Presentación Final del Taller de Proyecto 2 | 1d | 2012-11-30 09:00 | 2012-11-30 19:00 | 33 | 0d |  |

## Version 2 (saved 2012-03-20)

Note of the change: Agregué la columna Avance

Last finish stays 2012-11-30. Complete tasks 0 → 1.

Changed:

| ID | Task | Start | Finish | Complete | Total float |
| --- | --- | --- | --- | --- | --- |
| 1 | **Sistema Inteligente para Pronósticos de Partidos de Fútbol** | 2012-03-19 09:00 A |  | 0% → 1% |  |
| 2 | **Planificación** | 2012-03-19 09:00 A | 2012-03-19 19:00 A | 0% → 100% | 2d → none |
| 3 | Elaboraración del Glosario | 2012-03-19 09:00 A | 2012-03-19 19:00 A | 0% → 100% | 2d → none |

## Version 3 (saved 2012-03-22)

Note of the change: Historias de Usuario v0.2

Last finish 2012-11-30 → 2013-01-15 (+46d). Complete tasks 1 → 5.

Added:

| ID | Task | Duration | Start | Finish | Predecessors | Constraint | Resources |
| --- | --- | --- | --- | --- | --- | --- | --- |
| 14 | US001 | 1d | 2012-03-26 | 2012-03-26 | 11 | start no earlier than 2012-03-26 | Michael Martínez; Rodolfo Cordero; Renzo Martínez |
| 15 | US004 | 2d | 2012-03-27 | 2012-03-29 | 14 |  | Michael Martínez; Rodolfo Cordero; Renzo Martínez |
| 16 | US007 | 2d | 2012-04-02 | 2012-04-03 | 15 |  | Michael Martínez; Rodolfo Cordero; Renzo Martínez |
| 17 | US009 | 2d | 2012-04-05 | 2012-04-09 | 16 |  | Michael Martínez; Rodolfo Cordero; Renzo Martínez |
| 18 | US014 | 2d | 2012-04-10 | 2012-04-12 | 17 |  | Michael Martínez; Rodolfo Cordero; Renzo Martínez |
| 19 | US017 | 2d | 2012-04-16 | 2012-04-17 | 18 |  | Michael Martínez; Rodolfo Cordero; Renzo Martínez |
| 21 | US020 | 2d | 2012-04-19 | 2012-04-23 | 19 |  | Michael Martínez; Rodolfo Cordero; Renzo Martínez |
| 22 | US015 | 1d | 2012-04-24 | 2012-04-24 | 21 |  | Michael Martínez; Rodolfo Cordero; Renzo Martínez |
| 23 | US018 | 2d | 2012-04-26 | 2012-04-30 | 22 |  | Michael Martínez; Rodolfo Cordero; Renzo Martínez |
| 24 | US011 | 2d | 2012-05-01 | 2012-05-03 | 23 |  | Michael Martínez; Rodolfo Cordero; Renzo Martínez |
| 25 | US026 | 2d | 2012-05-14 | 2012-05-15 | 24 |  | Michael Martínez; Rodolfo Cordero; Renzo Martínez |
| 26 | US002 | 1d | 2012-05-17 | 2012-05-17 | 25 |  | Michael Martínez; Rodolfo Cordero; Renzo Martínez |
| 27 | US005 | 1d | 2012-05-21 | 2012-05-21 | 26 |  | Michael Martínez; Rodolfo Cordero; Renzo Martínez |
| 29 | US010 | 2.5d | 2012-05-22 | 2012-05-28 | 27 |  | Michael Martínez |
| 30 | US028 | 2.5d | 2012-05-28 | 2012-05-31 | 29 |  | Michael Martínez |
| 31 | US029 | 2.5d | 2012-06-04 | 2012-06-07 | 30 |  | Michael Martínez |
| 32 | US030 | 2.5d | 2012-06-07 | 2012-06-12 | 31 |  | Michael Martínez |
| 33 | US008 | 1d | 2012-06-14 | 2012-06-14 | 32 |  | Michael Martínez |

Changed:

| ID | Task | Start | Finish | Duration | Complete | Total float | Predecessors | Other |
| --- | --- | --- | --- | --- | --- | --- | --- | --- |
| 1 | **Sistema Inteligente para Pronósticos de Partidos de Fútbol** | 2012-03-19 09:00 A → 2012-03-19 A | 2012-11-30 19:00 → 2013-01-15 (+46d) | 84d → 111d |  |  |  |  |
| 2 | **Planificación** | 2012-03-19 09:00 A → 2012-03-19 A | 2012-03-19 19:00 A → 2012-03-19 A |  |  |  |  |  |
| 3 | Elaboraración del Glosario | 2012-03-19 09:00 A → 2012-03-19 A | 2012-03-19 19:00 A → 2012-03-19 A |  |  |  |  |  |
| 4 | **Product Backlog** | 2012-03-22 09:00 → 2012-03-20 A (-2d) | 2012-03-22 19:00 → 2012-03-20 (-2d) | 1d → 0.6d | 0% → 17% | 2d → 109.4d |  |  |
| 5 | Creación de User Stories | 2012-03-22 09:00 → 2012-03-20 (-2d) | 2012-03-22 13:00 → 2012-03-20 (-2d) |  |  | 2d → 109.5d |  | constraint start no earlier than 2012-03-22 09:00 → start no earlier than 2012-03-20 |
| 6 | Priorización de User Stories | 2012-03-22 15:00 → 2012-03-20 A (-2d) | 2012-03-22 19:00 → 2012-03-20 A (-2d) | 0.5d → 0.1d | 0% → 100% | 2d → none |  | constraint start no earlier than 2012-03-22 09:00 → start no earlier than 2012-03-20 |
| 7 | **Planificación de los Sprints** | 2012-03-23 09:00 → 2012-03-20 A (-3d) | 2012-03-26 19:00 → 2012-03-20 (-6d) | 2d → 0.4d | 0% → 75% | 2d → 76d |  |  |
| 8 | Determinar Sprints | 2012-03-23 09:00 → 2012-03-20 A (-3d) | 2012-03-23 13:00 → 2012-03-20 A (-3d) | 0.5d → 0.1d | 0% → 100% | 2d → none |  |  |
| 9 | Determinar los Sprints Backlog | 2012-03-23 15:00 → 2012-03-20 A (-3d) | 2012-03-23 19:00 → 2012-03-20 A (-3d) | 0.5d → 0.1d | 0% → 100% | 2d → none |  | constraint none → start no earlier than 2012-03-20 |
| 10 | Determinar duración de cada Sprint | 2012-03-26 09:00 → 2012-03-20 A (-6d) | 2012-03-26 13:00 → 2012-03-20 A (-6d) | 0.5d → 0.1d | 0% → 100% | 2d → none |  |  |
| 11 | Determinar Releases | 2012-03-26 15:00 → 2012-03-20 (-6d) | 2012-03-26 19:00 → 2012-03-20 (-6d) | 0.5d → 0.1d |  | 2d → 76d |  |  |
| 12 | **Construcción** | 2012-03-29 09:00 → 2012-03-26 (-3d) | 2012-06-18 19:00 → 2012-06-14 (-4d) |  |  | 2d → 75d |  |  |
| 13 | **Sprint 1** | 2012-03-29 09:00 → 2012-03-26 (-3d) | 2012-04-20 19:00 → 2012-04-17 (-3d) |  |  | 2d → 75d | 11 → none | constraint start no earlier than 2012-03-29 09:00 → none; resources Michael Martínez; Desarrollador → none |
| 20 | **Sprint 2** | 2012-04-23 09:00 → 2012-04-19 (-4d) | 2012-05-24 19:00 → 2012-05-21 (-3d) |  |  | 2d → 75d | 13 → none | resources Michael Martínez; Desarrollador → none |
| 28 | **Sprint 3** | 2012-05-25 09:00 → 2012-05-22 (-3d) | 2012-06-18 19:00 → 2012-06-14 (-4d) |  |  | 2d → 75d | 20 → none |  |
| 34 | **Diseño de la Red Neuronal** | 2012-03-29 09:00 → 2012-06-18 (+81d) | 2012-03-30 13:00 → 2012-06-19 (+81d) | 1.5d → 2d |  | 78.5d → 1d |  |  |
| 35 | Análisis de las características | 2012-03-29 09:00 → 2012-06-18 (+81d) | 2012-03-29 13:00 → 2012-06-18 (+81d) |  |  | 78.5d → 1d | 11 → none | constraint start no earlier than 2012-03-29 09:00 → start no earlier than 2012-06-18 |
| 36 | Análisis de los patrones | 2012-03-29 15:00 → 2012-06-18 (+81d) | 2012-03-29 19:00 → 2012-06-18 (+81d) |  |  | 78.5d → 1d |  |  |
| 37 | Diseño de la RNA | 2012-03-30 09:00 → 2012-06-19 (+81d) | 2012-03-30 13:00 → 2012-06-19 (+81d) | 0.5d → 1d |  | 78.5d → 1d |  |  |
| 38 | Lanzamiento de Release 1 | 2012-06-21 09:00 → 2012-06-21 | 2012-06-21 19:00 → 2012-06-21 |  |  | 2d → 1d | 28 → 37 |  |
| 39 | Cierre parcial del Producto | 2012-06-22 09:00 → 2012-06-25 (+3d) | 2012-06-22 19:00 → 2012-06-25 (+3d) |  |  | 2d → 1d |  |  |
| 40 | Presentación Parcial del Taller de Proyecto 1 | 2012-06-25 09:00 → 2012-06-26 (+1d) | 2012-06-25 19:00 → 2012-06-26 (+1d) |  |  | 2d → 1d |  |  |
| 41 | **Contrucción** | 2012-08-20 09:00 → 2012-08-20 | 2012-10-26 19:00 → 2012-12-25 (+60d) | 27d → 54d |  |  |  |  |
| 42 | Sprint 4 | 2012-08-20 09:00 → 2012-08-20 | 2012-09-07 19:00 → 2012-09-27 (+20d) | 9d → 18d |  |  |  | constraint start no earlier than 2012-08-20 09:00 → start no earlier than 2012-08-20; resources Michael Martínez; Desarrollador → Michael Martínez |
| 43 | Sprint 5 | 2012-09-10 09:00 → 2012-10-01 (+21d) | 2012-09-28 19:00 → 2012-11-15 (+48d) | 9d → 18d |  |  |  | resources Michael Martínez; Desarrollador → Michael Martínez |
| 44 | Sprint 6 | 2012-10-01 09:00 → 2012-11-19 (+49d) | 2012-10-26 19:00 → 2012-12-25 (+60d) | 9d → 18d |  |  |  | resources Michael Martínez; Desarrollador → Michael Martínez |
| 45 | **Entrenamiento** | 2012-10-29 09:00 → 2012-12-26 (+58d) | 2012-11-22 19:00 → 2013-01-09 (+48d) |  |  |  |  |  |
| 46 | Implementación del módulo de entrenamiento | 2012-10-29 09:00 → 2012-12-26 (+58d) | 2012-11-01 19:00 → 2012-12-27 (+56d) |  |  |  |  |  |
| 47 | Entrenamiento del Sistema | 2012-11-02 09:00 → 2012-12-28 (+56d) | 2012-11-22 19:00 → 2013-01-09 (+48d) |  |  |  |  |  |
| 48 | **Pruebas de Sistemas Expertos** | 2012-11-23 09:00 → 2013-01-10 (+48d) | 2012-11-23 19:00 → 2013-01-10 (+48d) |  |  |  |  |  |
| 49 | Validación y verificación de Sistemas Expertos | 2012-11-23 09:00 → 2013-01-10 (+48d) | 2012-11-23 19:00 → 2013-01-10 (+48d) |  |  |  |  |  |
| 50 | Lanzamiento de Release 2 | 2012-11-26 09:00 → 2013-01-11 (+46d) | 2012-11-26 19:00 → 2013-01-11 (+46d) |  |  |  |  |  |
| 51 | Cierre final del Producto | 2012-11-29 09:00 → 2013-01-14 (+46d) | 2012-11-29 19:00 → 2013-01-14 (+46d) |  |  |  |  |  |
| 52 | Presentación Final del Taller de Proyecto 2 | 2012-11-30 09:00 → 2013-01-15 (+46d) | 2012-11-30 19:00 → 2013-01-15 (+46d) |  |  |  |  |  |

## Version 4 (saved 2012-03-23)

Note of the change: Actualización del proyecto

Last finish 2013-01-15 → 2012-11-29 (-47d). Complete tasks 5 → 6.

Changed:

| ID | Task | Start | Finish | Duration | Complete | Total float |
| --- | --- | --- | --- | --- | --- | --- |
| 1 | **Sistema Inteligente para Pronósticos de Partidos de Fútbol** |  | 2013-01-15 → 2012-11-29 (-47d) | 111d → 84d | 1% → 2% |  |
| 4 | **Product Backlog** |  | 2012-03-20 A |  | 17% → 100% | 109.4d → none |
| 5 | Creación de User Stories | 2012-03-20 A | 2012-03-20 A |  | 0% → 100% | 109.5d → none |
| 41 | **Contrucción** |  | 2012-12-25 → 2012-10-25 (-61d) | 54d → 27d |  |  |
| 42 | Sprint 4 |  | 2012-09-27 → 2012-09-06 (-21d) | 18d → 9d |  |  |
| 43 | Sprint 5 | 2012-10-01 → 2012-09-10 (-21d) | 2012-11-15 → 2012-09-27 (-49d) | 18d → 9d |  |  |
| 44 | Sprint 6 | 2012-11-19 → 2012-10-01 (-49d) | 2012-12-25 → 2012-10-25 (-61d) | 18d → 9d |  |  |
| 45 | **Entrenamiento** | 2012-12-26 → 2012-10-29 (-58d) | 2013-01-09 → 2012-11-20 (-50d) |  |  |  |
| 46 | Implementación del módulo de entrenamiento | 2012-12-26 → 2012-10-29 (-58d) | 2012-12-27 → 2012-10-30 (-58d) |  |  |  |
| 47 | Entrenamiento del Sistema | 2012-12-28 → 2012-11-01 (-57d) | 2013-01-09 → 2012-11-20 (-50d) |  |  |  |
| 48 | **Pruebas de Sistemas Expertos** | 2013-01-10 → 2012-11-22 (-49d) | 2013-01-10 → 2012-11-22 (-49d) |  |  |  |
| 49 | Validación y verificación de Sistemas Expertos | 2013-01-10 → 2012-11-22 (-49d) | 2013-01-10 → 2012-11-22 (-49d) |  |  |  |
| 50 | Lanzamiento de Release 2 | 2013-01-11 → 2012-11-26 (-46d) | 2013-01-11 → 2012-11-26 (-46d) |  |  |  |
| 51 | Cierre final del Producto | 2013-01-14 → 2012-11-27 (-48d) | 2013-01-14 → 2012-11-27 (-48d) |  |  |  |
| 52 | Presentación Final del Taller de Proyecto 2 | 2013-01-15 → 2012-11-29 (-47d) | 2013-01-15 → 2012-11-29 (-47d) |  |  |  |

## Version 5 (saved 2012-04-03)

Note of the change: Actualización del avance del proyecto. Actualización del proyect charter a la nueva plantilla. Actualización del avance de las tareas.

Last finish stays 2012-11-29. Complete tasks 6 → 9.

Changed:

| ID | Task | Start | Finish | Complete | Total float |
| --- | --- | --- | --- | --- | --- |
| 1 | **Sistema Inteligente para Pronósticos de Partidos de Fútbol** |  |  | 2% → 11% |  |
| 12 | **Construcción** | 2012-03-26 A |  | 0% → 22% |  |
| 13 | **Sprint 1** | 2012-03-26 A |  | 0% → 67% |  |
| 14 | US001 | 2012-03-26 A | 2012-03-26 A | 0% → 100% | 48d → none |
| 15 | US004 | 2012-03-27 A | 2012-03-29 A | 0% → 100% | 48d → none |
| 16 | US007 | 2012-04-02 A | 2012-04-03 A | 0% → 100% | 48d → none |
| 17 | US009 | 2012-04-05 A |  | 0% → 60% | 48d → 49.2d |
| 18 | US014 | 2012-04-10 A |  | 0% → 50% | 48d → 48.2d |
| 19 | US017 | 2012-04-16 A |  | 0% → 10% |  |

## Version 6 (saved 2012-04-09)

Note of the change: Actualización del avance de las tareas

Last finish stays 2012-11-29.

Changed:

| ID | Task | Complete | Total float |
| --- | --- | --- | --- |
| 1 | **Sistema Inteligente para Pronósticos de Partidos de Fútbol** | 11% → 15% |  |
| 12 | **Construcción** | 22% → 32% |  |
| 13 | **Sprint 1** | 67% → 95% |  |
| 17 | US009 | 60% → 90% | 49.2d → 51.6d |
| 18 | US014 | 50% → 90% | 48.2d → 49.8d |
| 19 | US017 | 10% → 90% |  |

## Version 7 (saved 2012-04-13)

Note of the change: Se actualizó el cronograma del Proyecto. Se actualizó el avance de las tareas.

Last finish stays 2012-11-29. Complete tasks 9 → 12.

Added:

| ID | Task | Duration | Start | Finish | Predecessors | Constraint | Resources |
| --- | --- | --- | --- | --- | --- | --- | --- |
| 20 | Revisión por pares | 2d | 2012-04-16 A | 2012-04-17 A | 19 |  | Michael Martínez |
| 21 | Ejecución de integración | 0.2d | 2012-04-17 A | 2012-04-17 A | 20 | start no earlier than 2012-04-19 | Michael Martínez |
| 22 | Envío de Sprint 1 a QA | 0d | 2012-04-17 A | 2012-04-17 A | 21 |  | Michael Martínez |
| 31 | Revisión por pares | 2d | 2012-05-17 | 2012-05-21 | 30 |  | Michael Martínez |
| 32 | Ejecución de integración | 0.2d | 2012-05-22 | 2012-05-22 | 31 |  | Michael Martínez |
| 33 | Envío de Sprint 2 a QA | 0d | 2012-05-22 | 2012-05-22 | 32 |  | Michael Martínez |
| 40 | Revisión por pares | 2d | 2012-06-07 | 2012-06-11 | 39 |  | Michael Martínez |
| 41 | Ejecución de integración | 0.2d | 2012-06-12 | 2012-06-12 | 40 |  | Michael Martínez |
| 42 | Envío de Sprint 3 a QA | 0d | 2012-06-12 | 2012-06-12 | 41 |  | Michael Martínez |

Changed:

| ID | Task | Start | Finish | Duration | Complete | Total float | Predecessors | Other |
| --- | --- | --- | --- | --- | --- | --- | --- | --- |
| 1 | **Sistema Inteligente para Pronósticos de Partidos de Fútbol** |  |  |  | 15% → 17% |  |  |  |
| 12 | **Construcción** |  | 2012-06-14 → 2012-06-12 (-2d) | 33d → 31.2d | 32% → 35% | 48d → 49.8d |  |  |
| 13 | **Sprint 1** |  |  |  | 95% → 91% | 48d → 49.93d |  |  |
| 14 | US001 |  |  |  |  |  |  | resources Michael Martínez; Rodolfo Cordero; Renzo Martínez → Renzo Martínez |
| 15 | US004 |  | 2012-03-29 A → 2012-03-27 A (-2d) | 2d → 1d |  |  |  | resources Michael Martínez; Rodolfo Cordero; Renzo Martínez → Renzo Martínez |
| 16 | US007 | 2012-04-02 A → 2012-03-29 A (-4d) | 2012-04-03 A → 2012-04-02 A (-1d) |  |  |  |  | resources Michael Martínez; Rodolfo Cordero; Renzo Martínez → Renzo Martínez |
| 17 | US009 | 2012-04-05 A → 2012-04-03 A (-2d) | 2012-04-09 → 2012-04-03 (-6d) | 2d → 1d | 90% → 80% | 51.6d → 55.15d |  | resources Michael Martínez; Rodolfo Cordero; Renzo Martínez → Rodolfo Cordero |
| 18 | US014 | 2012-04-10 A → 2012-04-05 A (-5d) | 2012-04-12 → 2012-04-09 (-3d) |  | 90% → 81% | 49.8d → 53.53d |  | resources Michael Martínez; Rodolfo Cordero; Renzo Martínez → Rodolfo Cordero |
| 19 | US017 | 2012-04-16 A → 2012-04-10 A (-6d) | 2012-04-17 → 2012-04-12 (-5d) |  | 90% → 80% | 48d → 51.93d |  | resources Michael Martínez; Rodolfo Cordero; Renzo Martínez → Rodolfo Cordero |
| 23 | **Sprint 2** | 2012-04-19 → 2012-04-16 A (-3d) | 2012-05-21 → 2012-05-22 (+1d) | 11d → 13.2d | 0% → 16% | 48d → 58.8d |  |  |
| 24 | US002 | 2012-05-17 → 2012-04-16 A (-31d) | 2012-05-17 → 2012-04-16 (-31d) |  | 0% → 78% | 48d → 51.15d | 30 → 19 | resources Michael Martínez; Rodolfo Cordero; Renzo Martínez → Rodolfo Cordero |
| 25 | US005 | 2012-05-21 → 2012-04-17 A (-34d) | 2012-05-21 → 2012-04-17 (-34d) |  | 0% → 85% | 48d → 50.3d |  | resources Michael Martínez; Rodolfo Cordero; Renzo Martínez → Renzo Martínez |
| 26 | US011 | 2012-05-01 → 2012-04-19 A (-12d) | 2012-05-03 → 2012-04-19 (-14d) | 2d → 1d | 0% → 50% | 48d → 49.8d | 28 → 25 | resources Michael Martínez; Rodolfo Cordero; Renzo Martínez → Rodolfo Cordero |
| 27 | US015 | 2012-04-24 → 2012-04-23 (-1d) |  | 1d → 2d |  | 48d → 49.8d | 29 → 26 | resources Michael Martínez; Rodolfo Cordero; Renzo Martínez → Rodolfo Cordero |
| 28 | US018 |  |  |  |  | 48d → 49.8d |  | resources Michael Martínez; Rodolfo Cordero; Renzo Martínez → Rodolfo Cordero |
| 29 | US020 | 2012-04-19 → 2012-05-01 (+12d) | 2012-04-23 → 2012-05-03 (+10d) |  |  | 48d → 49.8d | 19 → 28 | resources Michael Martínez; Rodolfo Cordero; Renzo Martínez → Renzo Martínez |
| 30 | US026 |  |  |  |  | 48d → 49.8d | 26 → 29 | resources Michael Martínez; Rodolfo Cordero; Renzo Martínez → Renzo Martínez |
| 34 | **Sprint 3** | 2012-05-22 → 2012-05-17 (-5d) | 2012-06-14 → 2012-06-12 (-2d) | 11d → 11.2d |  | 48d → 49.8d |  |  |
| 35 | US010 | 2012-05-22 → 2012-05-17 (-5d) | 2012-05-28 → 2012-05-21 (-7d) | 2.5d → 2d |  | 48d → 49.8d | 25 → 30 | resources Michael Martínez → none |
| 36 | US028 | 2012-05-28 → 2012-05-22 (-6d) | 2012-05-31 → 2012-05-24 (-7d) | 2.5d → 2d |  | 48d → 49.8d |  | resources Michael Martínez → none |
| 37 | US029 | 2012-06-04 → 2012-05-28 (-7d) | 2012-06-07 → 2012-05-29 (-9d) | 2.5d → 2d |  | 48d → 49.8d |  | resources Michael Martínez → none |
| 38 | US030 | 2012-06-07 → 2012-05-31 (-7d) | 2012-06-12 → 2012-06-04 (-8d) | 2.5d → 2d |  | 48d → 49.8d |  | resources Michael Martínez → none |
| 39 | US008 | 2012-06-14 → 2012-06-05 (-9d) | 2012-06-14 → 2012-06-05 (-9d) |  |  | 48d → 49.8d |  | resources Michael Martínez → none |

## Version 8 (saved 2012-04-14)

Note of the change: Se han añadido las fechas de recepción de observaciones por parte de QA. Se han actualizado el avance de las tareas finalizadas (Pruebas unitarias) del Sprint 1. Se han actualizado el avance de las tareas del Sprint 2.

Last finish stays 2012-11-29. Complete tasks 12 → 15.

Added:

| ID | Task | Duration | Start | Finish | Predecessors | Constraint | Resources |
| --- | --- | --- | --- | --- | --- | --- | --- |
| 23 | Recepción de observaciones por QA | 0d | 2012-04-17 | 2012-04-17 | 22 | start no earlier than 2012-04-17 | Analista QA |
| 24 | Corrección de observaciones | 1d | 2012-04-17 | 2012-04-17 | 23 |  | Michael Martínez |
| 36 | Recepción de observaciones por QA | 0d | 2012-05-14 | 2012-05-14 | 35 | start no earlier than 2012-05-14 | Analista QA |
| 37 | Corrección de observaciones | 1d | 2012-05-14 | 2012-05-14 | 36 |  | Michael Martínez |
| 47 | Recepción de observaciones por QA | 0d | 2012-06-05 | 2012-06-05 | 46 | start no earlier than 2012-06-05 | Analista QA |
| 48 | Corrección de observaciones | 1d | 2012-06-05 | 2012-06-05 | 47 |  | Michael Martínez |
| 53 | Envío de la red neuronal a QA | 0d | 2012-06-14 | 2012-06-14 | 52 |  | Michael Martínez |
| 54 | Recepción de observaciones por QA | 0d | 2012-06-18 | 2012-06-18 | 53 | start no earlier than 2012-06-18 | Analista QA |
| 55 | Corrección de observaciones | 1d | 2012-06-18 | 2012-06-18 | 54 |  | Michael Martínez |

Changed:

| ID | Task | Start | Finish | Duration | Complete | Total float | Predecessors | Other |
| --- | --- | --- | --- | --- | --- | --- | --- | --- |
| 1 | **Sistema Inteligente para Pronósticos de Partidos de Fútbol** |  |  |  | 17% → 14% |  |  |  |
| 12 | **Construcción** |  | 2012-06-12 → 2012-06-05 (-7d) | 31.2d → 29d | 35% → 29% | 49.8d → 52d |  |  |
| 13 | **Sprint 1** |  |  |  | 91% → 88% | 49.93d → 70d |  |  |
| 16 | US007 |  | 2012-04-02 A → 2012-03-29 A (-4d) | 2d → 1d |  |  |  |  |
| 17 | US009 | 2012-04-03 A → 2012-04-02 A (-1d) | 2012-04-03 → 2012-04-02 A (-1d) |  | 80% → 100% | 55.15d → none |  |  |
| 18 | US014 | 2012-04-05 A → 2012-04-03 A (-2d) | 2012-04-09 → 2012-04-03 A (-6d) | 2d → 1d | 81% → 100% | 53.53d → none |  |  |
| 19 | US017 | 2012-04-10 A → 2012-04-05 A (-5d) | 2012-04-12 → 2012-04-05 A (-7d) | 2d → 1d | 80% → 100% | 51.93d → none |  |  |
| 20 | Revisión por pares | 2012-04-16 A → 2012-04-09 A (-7d) | 2012-04-17 A → 2012-04-09 A (-8d) | 2d → 1d |  |  |  |  |
| 21 | Ejecución de integración | 2012-04-17 A → 2012-04-10 A (-7d) | 2012-04-17 A → 2012-04-10 A (-7d) |  |  |  |  |  |
| 22 | Envío de Sprint 1 a QA | 2012-04-17 A → 2012-04-10 A (-7d) | 2012-04-17 A → 2012-04-10 A (-7d) |  |  |  |  |  |
| 25 | **Sprint 2** | 2012-04-16 A → 2012-04-09 A (-7d) | 2012-05-22 → 2012-05-14 (-8d) | 13.2d → 13d | 16% → 19% | 58.8d → 62d |  |  |
| 26 | US002 | 2012-04-16 A → 2012-04-09 A (-7d) | 2012-04-16 → 2012-04-09 (-7d) |  | 78% → 75% | 51.15d → 6.15d |  |  |
| 27 | US005 | 2012-04-17 A → 2012-04-10 A (-7d) | 2012-04-17 → 2012-04-10 (-7d) |  |  | 50.3d → 5.3d |  |  |
| 28 | US011 | 2012-04-19 A → 2012-04-12 A (-7d) | 2012-04-19 → 2012-04-12 (-7d) |  |  | 49.8d → 4.8d |  |  |
| 29 | US015 | 2012-04-23 → 2012-04-16 (-7d) | 2012-04-24 → 2012-04-17 (-7d) | 2d → 1.5d |  | 49.8d → 4.8d |  |  |
| 30 | US018 | 2012-04-26 → 2012-04-17 (-9d) | 2012-04-30 → 2012-04-19 (-11d) | 2d → 1.5d |  | 49.8d → 4.8d |  |  |
| 31 | US020 | 2012-05-01 → 2012-04-23 (-8d) | 2012-05-03 → 2012-04-24 (-9d) | 2d → 1.5d |  | 49.8d → 4.8d |  |  |
| 32 | US026 | 2012-05-14 → 2012-04-24 (-20d) | 2012-05-15 → 2012-04-26 (-19d) | 2d → 1.5d |  | 49.8d → 4.8d |  |  |
| 33 | Revisión por pares | 2012-05-17 → 2012-04-30 (-17d) | 2012-05-21 → 2012-04-30 (-21d) | 2d → 1d |  | 58.8d → 63.8d |  |  |
| 34 | Ejecución de integración | 2012-05-22 → 2012-05-01 (-21d) | 2012-05-22 → 2012-05-01 (-21d) |  |  | 58.8d → 63.8d |  |  |
| 35 | Envío de Sprint 2 a QA | 2012-05-22 → 2012-05-01 (-21d) | 2012-05-22 → 2012-05-01 (-21d) |  |  | 58.8d → 63.8d |  |  |
| 38 | **Sprint 3** | 2012-05-17 → 2012-04-30 (-17d) | 2012-06-12 → 2012-06-05 (-7d) | 11.2d → 14d |  | 49.8d → 3d |  |  |
| 39 | US010 | 2012-05-17 → 2012-04-30 (-17d) | 2012-05-21 → 2012-05-01 (-20d) |  |  | 49.8d → 4.8d |  |  |
| 40 | US028 | 2012-05-22 → 2012-05-03 (-19d) | 2012-05-24 → 2012-05-14 (-10d) |  |  | 49.8d → 4.8d |  |  |
| 41 | US029 | 2012-05-28 → 2012-05-15 (-13d) | 2012-05-29 → 2012-05-17 (-12d) |  |  | 49.8d → 4.8d |  |  |
| 42 | US030 | 2012-05-31 → 2012-05-21 (-10d) | 2012-06-04 → 2012-05-22 (-13d) |  |  | 49.8d → 4.8d |  |  |
| 43 | US008 | 2012-06-05 → 2012-05-24 (-12d) | 2012-06-05 → 2012-05-24 (-12d) |  |  | 49.8d → 4.8d |  |  |
| 44 | Revisión por pares | 2012-06-07 → 2012-05-28 (-10d) | 2012-06-11 → 2012-05-29 (-13d) |  |  | 49.8d → 4.8d |  |  |
| 45 | Ejecución de integración | 2012-06-12 → 2012-05-31 (-12d) | 2012-06-12 → 2012-05-31 (-12d) |  |  | 49.8d → 4.8d |  |  |
| 46 | Envío de Sprint 3 a QA | 2012-06-12 → 2012-05-31 (-12d) | 2012-06-12 → 2012-05-31 (-12d) |  |  | 49.8d → 4.8d |  |  |
| 49 | **Diseño de la Red Neuronal** | 2012-06-18 → 2012-06-11 (-7d) | 2012-06-19 → 2012-06-18 (-1d) | 2d → 4d |  | 1d → 2d |  |  |
| 50 | Análisis de las características | 2012-06-18 → 2012-06-11 (-7d) | 2012-06-18 → 2012-06-11 (-7d) | 0.5d → 1d |  | 1d → 2d | none → 48 | constraint start no earlier than 2012-06-18 → start no earlier than 2012-06-11 |
| 51 | Análisis de los patrones | 2012-06-18 → 2012-06-12 (-6d) | 2012-06-18 → 2012-06-12 (-6d) | 0.5d → 1d |  | 1d → 2d |  |  |
| 52 | Diseño de la RNA | 2012-06-19 → 2012-06-14 (-5d) | 2012-06-19 → 2012-06-14 (-5d) |  |  | 1d → 2d |  |  |
| 56 | Lanzamiento de Release 1 | 2012-06-21 → 2012-06-19 (-2d) | 2012-06-21 → 2012-06-19 (-2d) |  |  | 1d → 2d | 52 → 55 |  |
| 57 | Cierre parcial del Producto | 2012-06-25 → 2012-06-21 (-4d) | 2012-06-25 → 2012-06-21 (-4d) |  |  | 1d → 2d |  |  |
| 58 | Presentación Parcial del Taller de Proyecto 1 | 2012-06-26 → 2012-06-25 (-1d) | 2012-06-26 → 2012-06-25 (-1d) |  |  | 1d → 2d |  |  |

## Version 9 (saved 2012-04-20)

Note of the change: Se ha ctualizado el avance de las tareas.

Last finish stays 2012-11-29. Complete tasks 15 → 20.

Changed:

| ID | Task | Start | Finish | Complete | Total float |
| --- | --- | --- | --- | --- | --- |
| 1 | **Sistema Inteligente para Pronósticos de Partidos de Fútbol** |  |  | 14% → 21% |  |
| 7 | **Planificación de los Sprints** |  | 2012-03-20 A | 75% → 100% | 82d → none |
| 11 | Determinar Releases | 2012-03-20 A | 2012-03-20 A | 0% → 100% | 82d → none |
| 12 | **Construcción** |  |  | 29% → 49% |  |
| 25 | **Sprint 2** |  |  | 19% → 75% |  |
| 26 | US002 |  | 2012-04-09 A | 75% → 100% | 6.15d → none |
| 27 | US005 |  |  | 85% → 96% | 5.3d → 73d |
| 28 | US011 |  | 2012-04-12 A | 50% → 100% | 4.8d → none |
| 29 | US015 | 2012-04-16 A | 2012-04-17 A | 0% → 100% | 4.8d → none |
| 30 | US018 | 2012-04-17 A | 2012-04-19 A | 0% → 100% | 4.8d → none |
| 31 | US020 | 2012-04-23 A |  | 0% → 80% | 4.8d → 6d |
| 32 | US026 | 2012-04-24 A |  | 0% → 80% |  |

## Version 10 (saved 2012-05-15)

Note of the change: Se ha actualizado el avance de algunas tareas.

Last finish stays 2012-11-29. Complete tasks 20 → 28.

Added:

| ID | Task | Duration | Start | Finish | Predecessors | Resources |
| --- | --- | --- | --- | --- | --- | --- |
| 40 | US012 | 0.5d | 2012-04-30 A | 2012-04-30 | 39 | Rodolfo Cordero |
| 41 | US049 | 1d | 2012-05-01 A | 2012-05-01 | 40 | Renzo Martínez |
| 42 | US021 | 0.5d | 2012-05-03 A | 2012-05-03 | 41 | Renzo Martínez |
| 46 | US032 | 1d | 2012-05-17 A | 2012-05-21 | 45 | Renzo Martínez |
| 47 | US033 | 1d | 2012-05-21 | 2012-05-22 | 46 | Rodolfo Cordero |
| 48 | US050 | 1d | 2012-05-22 A | 2012-05-24 | 47 | Renzo Martínez |
| 49 | US013 | 1d | 2012-05-24 A | 2012-05-28 | 48 | Rodolfo Cordero |
| 50 | US022 | 1d | 2012-05-28 A | 2012-05-29 | 49 | Rodolfo Cordero |
| 51 | US027 | 1d | 2012-05-29 | 2012-05-31 | 50 | Rodolfo Cordero |

Changed:

| ID | Task | Start | Finish | Duration | Complete | Total float | Predecessors | Other |
| --- | --- | --- | --- | --- | --- | --- | --- | --- |
| 1 | **Sistema Inteligente para Pronósticos de Partidos de Fútbol** |  |  |  | 21% → 25% |  |  |  |
| 12 | **Construcción** |  | 2012-06-05 → 2012-06-11 (+6d) | 29d → 30.7d | 49% → 55% | 52d → 50.3d |  |  |
| 13 | **Sprint 1** |  | 2012-04-17 A |  | 88% → 100% | 70d → none |  |  |
| 23 | Recepción de observaciones por QA | 2012-04-17 A | 2012-04-17 A |  | 0% → 100% | 70d → none |  |  |
| 24 | Corrección de observaciones | 2012-04-17 A | 2012-04-17 A |  | 0% → 100% | 70d → none |  |  |
| 25 | **Sprint 2** |  |  |  | 75% → 91% |  |  |  |
| 27 | US005 |  | 2012-04-10 A |  | 96% → 100% | 73d → none |  |  |
| 31 | US020 |  | 2012-04-24 A |  | 80% → 100% | 6d → none |  |  |
| 32 | US026 |  | 2012-04-26 A |  | 80% → 100% | 4.8d → none |  |  |
| 33 | Revisión por pares | 2012-04-30 A | 2012-04-30 A |  | 0% → 100% | 63.8d → none |  |  |
| 34 | Ejecución de integración | 2012-05-01 A | 2012-05-01 A |  | 0% → 100% | 63.8d → none |  |  |
| 35 | Envío de Sprint 2 a QA | 2012-05-01 A | 2012-05-01 A |  | 0% → 100% | 63.8d → none |  |  |
| 38 | **Sprint 3** | 2012-04-30 A | 2012-06-05 → 2012-06-11 (+6d) | 14d → 15.7d | 0% → 6% | 3d → 1.3d |  |  |
| 39 | US008 | 2012-05-24 → 2012-04-30 (-24d) | 2012-05-24 → 2012-04-30 (-24d) | 1d → 0.5d |  | 4.8d → 2.25d | 45 → 32 | resources none → Rodolfo Cordero |
| 43 | US028 | 2012-05-03 A |  | 2d → 1d | 0% → 8% | 4.8d → 1.85d | 52 → 42 | resources none → Renzo Martínez |
| 44 | US029 | 2012-05-15 → 2012-05-14 A (-1d) | 2012-05-17 → 2012-05-15 (-2d) | 2d → 1d | 0% → 8% | 4.8d → 1.77d |  | resources none → Renzo Martínez |
| 45 | US030 | 2012-05-21 → 2012-05-15 A (-6d) | 2012-05-22 → 2012-05-17 (-5d) | 2d → 1d | 0% → 9% | 4.8d → 1.68d |  | resources none → Renzo Martínez |
| 52 | US010 | 2012-04-30 → 2012-05-31 A (+31d) | 2012-05-01 → 2012-06-04 (+34d) | 2d → 1d | 0% → 6% | 4.8d → 1.3d | 32 → 51 | resources none → Rodolfo Cordero |
| 53 | Revisión por pares | 2012-05-28 → 2012-06-04 (+7d) | 2012-05-29 → 2012-06-07 (+9d) |  |  | 4.8d → 1.3d | 39 → 52 |  |
| 54 | Ejecución de integración | 2012-05-31 → 2012-06-07 (+7d) | 2012-05-31 → 2012-06-07 (+7d) |  |  | 4.8d → 1.3d |  |  |
| 55 | Envío de Sprint 3 a QA | 2012-05-31 → 2012-06-07 (+7d) | 2012-05-31 → 2012-06-07 (+7d) |  |  | 4.8d → 1.3d |  |  |
| 56 | Recepción de observaciones por QA | 2012-06-05 → 2012-06-07 (+2d) | 2012-06-05 → 2012-06-07 (+2d) |  |  | 3d → 1.3d |  |  |
| 57 | Corrección de observaciones | 2012-06-05 → 2012-06-07 (+2d) | 2012-06-05 → 2012-06-11 (+6d) |  |  | 3d → 1.3d |  |  |
| 58 | **Diseño de la Red Neuronal** |  | 2012-06-18 → 2012-06-19 (+1d) |  |  | 2d → 1.3d |  |  |
| 59 | Análisis de las características |  | 2012-06-11 → 2012-06-12 (+1d) |  |  | 2d → 1.3d |  |  |
| 60 | Análisis de los patrones |  | 2012-06-12 → 2012-06-14 (+2d) |  |  | 2d → 1.3d |  |  |
| 61 | Diseño de la RNA |  | 2012-06-14 → 2012-06-18 (+4d) |  |  | 2d → 1.3d |  |  |
| 62 | Envío de la red neuronal a QA | 2012-06-14 → 2012-06-18 (+4d) | 2012-06-14 → 2012-06-18 (+4d) |  |  | 2d → 1.3d |  |  |
| 64 | Corrección de observaciones |  | 2012-06-18 → 2012-06-19 (+1d) |  |  | 2d → 1.3d |  |  |
| 65 | Lanzamiento de Release 1 |  | 2012-06-19 → 2012-06-21 (+2d) |  |  | 2d → 1.3d |  |  |
| 66 | Cierre parcial del Producto |  | 2012-06-21 → 2012-06-25 (+4d) |  |  | 2d → 1.3d |  |  |
| 67 | Presentación Parcial del Taller de Proyecto 1 |  | 2012-06-25 → 2012-06-26 (+1d) |  |  | 2d → 1.3d |  |  |

## Version 11 (saved 2012-05-16)

Note of the change: Se actualizó el cronograma del Proyecto

Last finish stays 2012-11-29. Complete tasks 28 → 29.

Changed:

| ID | Task | Start | Finish | Complete | Total float |
| --- | --- | --- | --- | --- | --- |
| 1 | **Sistema Inteligente para Pronósticos de Partidos de Fútbol** |  |  | 25% → 31% |  |
| 12 | **Construcción** |  |  | 55% → 69% |  |
| 38 | **Sprint 3** |  |  | 6% → 38% |  |
| 39 | US008 | 2012-04-30 A | 2012-04-30 A | 0% → 100% | 2.25d → none |
| 40 | US012 |  |  | 14% → 85% | 2.19d → 6.32d |
| 41 | US049 |  |  | 17% → 83% | 2.02d → 5.49d |
| 43 | US028 |  |  | 8% → 25% | 1.85d → 5.15d |
| 44 | US029 |  |  | 8% → 33% | 1.77d → 4.82d |
| 45 | US030 |  |  | 9% → 36% | 1.68d → 4.46d |
| 47 | US033 | 2012-05-21 A |  | 0% → 22% | 1.56d → 4.12d |
| 48 | US050 |  |  | 8% → 25% | 1.48d → 3.87d |
| 49 | US013 |  |  | 6% → 93% | 1.42d → 2.94d |
| 50 | US022 |  |  | 6% → 93% | 1.36d → 2.01d |
| 51 | US027 | 2012-05-29 A |  | 0% → 65% |  |

## Version 12 (saved 2012-05-19)

Note of the change: Se actualizó el avance de las tareas de desarrollo.

Last finish stays 2012-11-29.

Changed:

| ID | Task | Complete | Total float |
| --- | --- | --- | --- |
| 1 | **Sistema Inteligente para Pronósticos de Partidos de Fútbol** | 31% → 32% |  |
| 12 | **Construcción** | 69% → 72% |  |
| 38 | **Sprint 3** | 38% → 43% |  |
| 42 | US021 | 17% → 83% | 5.4d → 5.9d |
| 45 | US030 | 36% → 86% |  |

## Version 13 (saved 2012-05-22)

Note of the change: Se ha actualizado el estado de las tareas de desarrollo.

Last finish stays 2012-11-29. Complete tasks 29 → 36.

Changed:

| ID | Task | Start | Finish | Complete | Total float |
| --- | --- | --- | --- | --- | --- |
| 1 | **Sistema Inteligente para Pronósticos de Partidos de Fútbol** |  |  | 32% → 36% |  |
| 12 | **Construcción** |  |  | 72% → 84% |  |
| 25 | **Sprint 2** |  |  | 91% → 96% |  |
| 36 | Recepción de observaciones por QA | 2012-05-14 A |  | 0% → 50% | 62d → 62.5d |
| 37 | Corrección de observaciones | 2012-05-14 A |  | 0% → 50% |  |
| 38 | **Sprint 3** |  |  | 43% → 66% | 1.3d → 50.3d |
| 41 | US049 |  | 2012-05-01 A | 83% → 100% | 5.49d → none |
| 42 | US021 |  | 2012-05-03 A | 83% → 100% | 5.9d → none |
| 43 | US028 |  | 2012-05-14 A | 25% → 100% | 5.65d → none |
| 44 | US029 |  | 2012-05-15 A | 33% → 100% | 5.32d → none |
| 45 | US030 |  | 2012-05-17 A | 86% → 100% | 4.46d → none |
| 46 | US032 |  | 2012-05-21 A | 12% → 100% | 4.34d → none |
| 48 | US050 |  | 2012-05-24 A | 25% → 100% | 3.87d → none |
| 51 | US027 |  |  | 65% → 85% |  |

## Version 14 (saved 2012-05-28)

Note of the change: Se ha atualizado el estado de avance de las tareas del Sprint 3.

Last finish stays 2012-11-29. Complete tasks 36 → 41.

Changed:

| ID | Task | Finish | Complete | Total float |
| --- | --- | --- | --- | --- |
| 1 | **Sistema Inteligente para Pronósticos de Partidos de Fútbol** |  | 36% → 38% |  |
| 12 | **Construcción** |  | 84% → 87% |  |
| 38 | **Sprint 3** |  | 66% → 75% |  |
| 40 | US012 | 2012-04-30 A | 85% → 100% | 6.32d → none |
| 49 | US013 | 2012-05-28 A | 93% → 100% | 3.14d → none |
| 50 | US022 | 2012-05-29 A | 93% → 100% | 2.21d → none |
| 51 | US027 | 2012-05-31 A | 85% → 100% | 1.36d → none |
| 52 | US010 | 2012-06-04 A | 6% → 100% | 1.3d → none |

## Version 15 (saved 2012-05-29)

Note of the change: Se ha actualizado el avance de las tareas y se ha dado por cerrado el Sprint 2.

Last finish stays 2012-11-29. Complete tasks 41 → 44.

Changed:

| ID | Task | Finish | Complete | Total float |
| --- | --- | --- | --- | --- |
| 1 | **Sistema Inteligente para Pronósticos de Partidos de Fútbol** |  | 38% → 39% |  |
| 12 | **Construcción** |  | 87% → 91% | 50.3d → 1.3d |
| 25 | **Sprint 2** | 2012-05-14 A | 96% → 100% | 62d → none |
| 36 | Recepción de observaciones por QA | 2012-05-14 A | 50% → 100% | 62.5d → none |
| 37 | Corrección de observaciones | 2012-05-14 A | 50% → 100% | 62d → none |
| 38 | **Sprint 3** |  | 75% → 80% | 50.3d → 1.3d |
| 47 | US033 | 2012-05-22 A | 22% → 100% | 58.5d → none |

## Version 16 (saved 2012-06-04)

Note of the change: Se ha actualizado el estado de la tarea Revisión de Pares del Sprint 3.

Last finish stays 2012-11-29.

Changed:

| ID | Task | Start | Complete |
| --- | --- | --- | --- |
| 1 | **Sistema Inteligente para Pronósticos de Partidos de Fútbol** |  | 39% → 41% |
| 12 | **Construcción** |  | 91% → 94% |
| 38 | **Sprint 3** |  | 80% → 86% |
| 53 | Revisión por pares | 2012-06-04 A | 0% → 50% |

## Version 17 (saved 2012-06-11)

Note of the change: Se ha actualizado el avance de las tareas de desarrollo.

Last finish stays 2012-11-29. Complete tasks 44 → 46.

Changed:

| ID | Task | Start | Finish | Complete | Total float |
| --- | --- | --- | --- | --- | --- |
| 1 | **Sistema Inteligente para Pronósticos de Partidos de Fútbol** |  |  | 41% → 42% |  |
| 12 | **Construcción** |  |  | 94% → 97% |  |
| 38 | **Sprint 3** |  |  | 86% → 94% |  |
| 53 | Revisión por pares |  | 2012-06-07 A | 50% → 100% | 1.3d → none |
| 54 | Ejecución de integración | 2012-06-07 A | 2012-06-07 A | 0% → 100% | 1.3d → none |

## Version 18 (saved 2012-06-13)

Note of the change: Se ha actualizado el estado de las tareas del Sprint 3.

Last finish stays 2012-11-29. Complete tasks 46 → 48.

Changed:

| ID | Task | Start | Finish | Complete | Total float |
| --- | --- | --- | --- | --- | --- |
| 1 | **Sistema Inteligente para Pronósticos de Partidos de Fútbol** |  |  | 42% → 43% |  |
| 12 | **Construcción** |  |  | 97% → 99% |  |
| 38 | **Sprint 3** |  |  | 94% → 97% |  |
| 55 | Envío de Sprint 3 a QA | 2012-06-07 A | 2012-06-07 A | 0% → 100% | 1.3d → none |
| 56 | Recepción de observaciones por QA | 2012-06-07 A | 2012-06-07 A | 0% → 100% | 1.3d → none |
| 57 | Corrección de observaciones | 2012-06-07 A |  | 0% → 50% |  |

## Version 19 (saved 2012-06-19)

Note of the change: Se ha actualziado el estado de las tareas

Last finish stays 2012-11-29. Complete tasks 48 → 49.

Changed:

| ID | Task | Finish | Complete | Total float |
| --- | --- | --- | --- | --- |
| 12 | **Construcción** | 2012-06-11 A | 99% → 100% | 1.3d → none |
| 38 | **Sprint 3** | 2012-06-11 A | 97% → 100% | 1.3d → none |
| 57 | Corrección de observaciones | 2012-06-11 A | 50% → 100% | 1.3d → none |

## Version 20 (saved 2012-06-22)

Note of the change: Se ha actualizado el avance de las tareas

Last finish stays 2012-11-29. Complete tasks 49 → 54.

Changed:

| ID | Task | Start | Finish | Complete | Total float | Predecessors |
| --- | --- | --- | --- | --- | --- | --- |
| 1 | **Sistema Inteligente para Pronósticos de Partidos de Fútbol** |  |  | 43% → 49% |  |  |
| 58 | **Diseño de la Red Neuronal** | 2012-06-11 A |  | 0% → 75% | 1.3d → 46.3d |  |
| 59 | Análisis de las características | 2012-06-11 A | 2012-06-12 A | 0% → 100% | 1.3d → none |  |
| 60 | Análisis de los patrones | 2012-06-12 A | 2012-06-14 A | 0% → 100% | 1.3d → none |  |
| 61 | Diseño de la RNA | 2012-06-14 A | 2012-06-18 A | 0% → 100% | 1.3d → none |  |
| 65 | Lanzamiento de Release 1 | 2012-06-19 A | 2012-06-21 A | 0% → 100% | 1.3d → none | 64 → 57 |
| 66 | Cierre parcial del Producto | 2012-06-21 A | 2012-06-25 A | 0% → 100% | 1.3d → none |  |

## Version 21 (saved 2012-08-14)

Note of the change: Se actualizó el cronograma incluyendo la presentación final de TP1 y la planificación del Sprint 4

Last finish 2012-11-29 → 2012-11-27 (-2d). Complete tasks 54 → 58.

Added:

| ID | Task | Duration | Start | Finish | Predecessors | Constraint |
| --- | --- | --- | --- | --- | --- | --- |
| 70 | US034 | 1d | 2012-08-13 | 2012-08-13 |  | start no earlier than 2012-08-13 |
| 71 | US036 | 1d | 2012-08-20 | 2012-08-20 | 70 |  |
| 72 | US037 | 1d | 2012-08-21 | 2012-08-21 | 71 |  |
| 73 | US023 | 1d | 2012-08-23 | 2012-08-23 | 72 |  |
| 74 | US024 | 1d | 2012-08-27 | 2012-08-27 | 73 |  |
| 75 | US035 | 1d | 2012-08-28 | 2012-08-28 | 74 |  |
| 76 | US031 | 1d | 2012-08-30 | 2012-08-30 | 75 |  |
| 77 | US046 | 2d | 2012-09-03 | 2012-09-04 | 76 |  |
| 78 | US047 | 2d | 2012-09-06 | 2012-09-10 | 77 |  |
| 79 | US048 | 1d | 2012-09-11 | 2012-09-11 | 78 |  |
| 80 | US053 | 1d | 2012-09-13 | 2012-09-13 | 79 |  |
| 81 | Revisión por pares | 1d | 2012-09-17 | 2012-09-17 | 80 |  |
| 82 | Ejecución de integración | 0.2d | 2012-09-18 | 2012-09-18 | 81 |  |
| 83 | Envío de Sprint 4 a QA | 0d | 2012-09-18 | 2012-09-18 | 82 |  |
| 84 | Recepción de observaciones por QA | 0d | 2012-09-18 | 2012-09-18 | 83 |  |
| 85 | Corrección de observaciones | 1d | 2012-09-18 | 2012-09-20 | 84 |  |

Changed:

| ID | Task | Start | Finish | Duration | Complete | Total float | Predecessors | Other |
| --- | --- | --- | --- | --- | --- | --- | --- | --- |
| 1 | **Sistema Inteligente para Pronósticos de Partidos de Fútbol** |  | 2012-11-29 → 2012-11-27 (-2d) | 84d → 85d | 49% → 50% |  |  |  |
| 58 | **Diseño de la Red Neuronal** |  | 2012-06-19 A |  | 75% → 100% | 46.3d → none |  |  |
| 62 | Envío de la red neuronal a QA | 2012-06-18 A | 2012-06-18 A |  | 0% → 100% | 1.3d → none |  |  |
| 63 | Recepción de observaciones por QA | 2012-06-18 A | 2012-06-18 A |  | 0% → 100% | 1.3d → none |  |  |
| 64 | Corrección de observaciones | 2012-06-18 A | 2012-06-19 A |  | 0% → 100% | 46.3d → none |  |  |
| 67 | Presentación Parcial del Taller de Proyecto 1 | 2012-06-25 → 2012-07-09 A (+14d) | 2012-06-26 → 2012-07-09 A (+13d) |  | 0% → 100% | 1.3d → none |  | constraint none → start no earlier than 2012-07-09 |
| 68 | **Contrucción** | 2012-08-20 → 2012-08-13 (-7d) |  | 27d → 28d |  |  |  |  |
| 69 | **Sprint 4** | 2012-08-20 → 2012-08-13 (-7d) | 2012-09-06 → 2012-09-20 (+14d) | 9d → 15.2d |  |  |  | constraint start no earlier than 2012-08-20 → none |
| 86 | Sprint 5 | 2012-09-10 → 2012-09-17 (+7d) | 2012-09-27 → 2012-10-02 (+5d) | 9d → 8d |  |  | 69 → 80 |  |
| 87 | Sprint 6 | 2012-10-01 → 2012-10-04 (+3d) |  | 9d → 7d |  |  |  |  |
| 88 | **Entrenamiento** |  | 2012-11-20 → 2012-11-19 (-1d) | 11d → 10d |  |  |  |  |
| 90 | Entrenamiento del Sistema |  | 2012-11-20 → 2012-11-19 (-1d) | 9d → 8d |  |  |  |  |
| 91 | **Pruebas de Sistemas Expertos** | 2012-11-22 → 2012-11-20 (-2d) | 2012-11-22 → 2012-11-20 (-2d) |  |  |  |  |  |
| 92 | Validación y verificación de Sistemas Expertos | 2012-11-22 → 2012-11-20 (-2d) | 2012-11-22 → 2012-11-20 (-2d) |  |  |  |  |  |
| 93 | Lanzamiento de Release 2 | 2012-11-26 → 2012-11-22 (-4d) | 2012-11-26 → 2012-11-22 (-4d) |  |  |  |  |  |
| 94 | Cierre final del Producto | 2012-11-27 → 2012-11-26 (-1d) | 2012-11-27 → 2012-11-26 (-1d) |  |  |  |  |  |
| 95 | Presentación Final del Taller de Proyecto 2 | 2012-11-29 → 2012-11-27 (-2d) | 2012-11-29 → 2012-11-27 (-2d) |  |  |  |  |  |

## Version 22 (saved 2012-09-03)

Note of the change: Se actualizó el estado del avance de las tareas

Last finish stays 2012-11-27. Complete tasks 58 → 65.

Changed:

| ID | Task | Start | Finish | Complete | Total float |
| --- | --- | --- | --- | --- | --- |
| 1 | **Sistema Inteligente para Pronósticos de Partidos de Fútbol** |  |  | 50% → 60% |  |
| 68 | **Contrucción** | 2012-08-13 A |  | 0% → 29% | 0d → 14d |
| 69 | **Sprint 4** | 2012-08-13 A |  | 0% → 58% | 0d → 26.8d |
| 70 | US034 | 2012-08-13 A | 2012-08-13 A | 0% → 100% | 0d → none |
| 71 | US036 | 2012-08-20 A | 2012-08-20 A | 0% → 100% | 0d → none |
| 72 | US037 | 2012-08-21 A | 2012-08-21 A | 0% → 100% | 0d → none |
| 73 | US023 | 2012-08-23 A | 2012-08-23 A | 0% → 100% | 0d → none |
| 74 | US024 | 2012-08-27 A | 2012-08-27 A | 0% → 100% | 0d → none |
| 75 | US035 | 2012-08-28 A | 2012-08-28 A | 0% → 100% | 0d → none |
| 76 | US031 | 2012-08-30 A |  | 0% → 94% | 0d → 30.88d |
| 77 | US046 | 2012-09-03 A |  | 0% → 21% | 0d → 30.46d |
| 78 | US047 | 2012-09-06 A |  | 0% → 23% | 0d → 30d |
| 80 | US053 | 2012-09-13 A | 2012-09-13 A | 0% → 100% | 0d → none |

## Version 23 (saved 2012-09-05)

Note of the change: Se ha actualizado el avance de las tareas en Sprint 4. Se ha actualizado el estado de avance en el cronograma del proyecto.

Last finish stays 2012-11-27. Complete tasks 65 → 66.

Changed:

| ID | Task | Start | Finish | Complete | Total float |
| --- | --- | --- | --- | --- | --- |
| 1 | **Sistema Inteligente para Pronósticos de Partidos de Fútbol** |  |  | 60% → 64% |  |
| 68 | **Contrucción** |  |  | 29% → 41% |  |
| 69 | **Sprint 4** |  |  | 58% → 82% |  |
| 76 | US031 |  | 2012-08-30 A | 94% → 100% | 30.88d → none |
| 77 | US046 |  |  | 21% → 92% | 30.46d → 32.61d |
| 78 | US047 |  |  | 23% → 87% | 30d → 30.87d |
| 79 | US048 | 2012-09-11 A |  | 0% → 87% |  |

## Version 24 (saved 2012-09-06)

Note of the change: Seha actualizado el avance de nuevas tareas llevadas a cabo. Se completó la revisión de pares. Se completó la integración del proyecto. Se completó el envío del Sprint 4 a QA.

Last finish stays 2012-11-27. Complete tasks 66 → 72.

Changed:

| ID | Task | Start | Finish | Complete | Total float |
| --- | --- | --- | --- | --- | --- |
| 1 | **Sistema Inteligente para Pronósticos de Partidos de Fútbol** |  |  | 64% → 66% |  |
| 68 | **Contrucción** |  |  | 41% → 47% |  |
| 69 | **Sprint 4** |  |  | 82% → 93% |  |
| 77 | US046 |  | 2012-09-04 A | 92% → 100% | 32.61d → none |
| 78 | US047 |  | 2012-09-10 A | 87% → 100% | 30.87d → none |
| 79 | US048 |  | 2012-09-11 A | 87% → 100% | 30d → none |
| 81 | Revisión por pares | 2012-09-17 A | 2012-09-17 A | 0% → 100% | 26.8d → none |
| 82 | Ejecución de integración | 2012-09-18 A | 2012-09-18 A | 0% → 100% | 26.8d → none |
| 83 | Envío de Sprint 4 a QA | 2012-09-18 A | 2012-09-18 A | 0% → 100% | 26.8d → none |

## Version 25 (saved 2012-09-07)

Note of the change: Se ha actualizado el avance de las tareas en el cronograma del proyecto.

Last finish stays 2012-11-27.

Changed:

| ID | Task | Other |
| --- | --- | --- |
| 70 | US034 | resources none → Michael Martínez |
| 71 | US036 | resources none → Michael Martínez |
| 72 | US037 | resources none → Michael Martínez |
| 73 | US023 | resources none → Milagros Cruz |
| 74 | US024 | resources none → Milagros Cruz |
| 75 | US035 | resources none → Milagros Cruz |
| 76 | US031 | resources none → Milagros Cruz |
| 77 | US046 | resources none → Michael Martínez |
| 78 | US047 | resources none → Michael Martínez |
| 79 | US048 | resources none → Michael Martínez |
| 80 | US053 | resources none → Milagros Cruz |
| 81 | Revisión por pares | resources none → Michael Martínez |
| 82 | Ejecución de integración | resources none → Michael Martínez |
| 83 | Envío de Sprint 4 a QA | resources none → Michael Martínez |
| 84 | Recepción de observaciones por QA | resources none → Analista QA |
| 85 | Corrección de observaciones | resources none → Michael Martínez |

## Version 26 (saved 2012-09-09)

Note of the change: Se ha planificado el Sprint 5 del desarrollo del producto software. Se ha actualizado el cronograma del proyecto con las nuevas tareas a desarrollar en el Sprint 5. Se ha añadido una nueva historia de usuario, por pedido del cliente, referente al manejo de roles.

Last finish stays 2012-11-27.

Added:

| ID | Task | Duration | Start | Finish | Predecessors | Resources |
| --- | --- | --- | --- | --- | --- | --- |
| 87 | US045 | 1d | 2012-09-17 | 2012-09-17 | 80 | No asignado |
| 88 | US055 | 2d | 2012-09-18 | 2012-09-20 | 87 | No asignado |
| 89 | US051 | 1d | 2012-09-24 | 2012-09-24 | 88 | No asignado |
| 90 | US052 | 1d | 2012-09-25 | 2012-09-25 | 89 | No asignado |
| 91 | US054 | 3d | 2012-09-27 | 2012-10-02 | 90 | No asignado |
| 92 | Revisión por pares | 1d | 2012-10-04 | 2012-10-04 | 91 | Michael Martínez |
| 93 | Ejecución de integración | 0d | 2012-10-04 | 2012-10-04 | 92 | Michael Martínez |
| 94 | Envío de Sprint 5 a QA | 0d | 2012-10-04 | 2012-10-04 | 93 | Michael Martínez |
| 95 | Recepción de observaciones por QA | 0d | 2012-10-04 | 2012-10-04 | 94 | Analista QA |
| 96 | Corrección de observaciones | 1d | 2012-10-15 | 2012-10-15 | 95 | Michael Martínez |
| 97 | Envío 2 de Sprint 5 a QA | 0d | 2012-10-15 | 2012-10-15 | 96 | Michael Martínez |

Changed:

| ID | Task | Finish | Duration | Complete | Predecessors | Other |
| --- | --- | --- | --- | --- | --- | --- |
| 1 | **Sistema Inteligente para Pronósticos de Partidos de Fútbol** |  |  | 66% → 65% |  |  |
| 68 | **Contrucción** |  |  | 47% → 44% |  |  |
| 86 | **Sprint 5** | 2012-10-02 → 2012-10-15 (+13d) | 8d → 10d |  |  | resources Michael Martínez → none |
| 98 | Sprint 6 |  |  |  | 86 → 91 |  |

## Version 27 (saved 2012-09-10)

Note of the change: Se ha actualizado los responsables de implementar las historias de usuario.

Last finish stays 2012-11-27.

Changed:

| ID | Task | Other |
| --- | --- | --- |
| 87 | US045 | resources No asignado → Milagros Cruz |
| 88 | US055 | resources No asignado → Milagros Cruz |
| 89 | US051 | resources No asignado → Rodolfo Cordero |
| 90 | US052 | resources No asignado → Rodolfo Cordero |
| 91 | US054 | resources No asignado → Milagros Cruz |

## Version 28 (saved 2012-09-11)

Note of the change: Se actualizó el cronograma.

Last finish 2012-11-27 → 2012-12-06 (+9d). Complete tasks 72 → 101.

Added:

| ID | Task | Duration | Start | Finish | Predecessors | Constraint | Resources |
| --- | --- | --- | --- | --- | --- | --- | --- |
| 4 | **Reunión de Asesoria/Cliente** | 1d | 2012-03-20 A | 2012-03-20 A |  |  |  |
| 5 | Revisión de avances | 0.5d | 2012-03-20 A | 2012-03-20 A | 3 |  | Michael Martínez |
| 6 | Asignación de nuevas actividades | 0.5d | 2012-03-20 A | 2012-03-20 A | 5 |  | David Mauricio |
| 7 | Elaboración de Acta de Reunión | 0d | 2012-03-20 A | 2012-03-20 A | 6 |  | Michael Martínez |
| 8 | Firma de acuerdo del acta de reunión | 0d | 2012-03-20 A | 2012-03-20 A | 7 |  | David Mauricio |
| 18 | Envío de Contrato a Software Factory | 0d | 2012-03-26 A | 2012-03-26 A | 16 |  | Michael Martínez |
| 19 | Aprobación de Contrato por Software Factory | 0d | 2012-03-26 A | 2012-03-26 A | 18 |  | Gerente de Software Factory |
| 32 | **Reunión de Asesoría/Cliente** | 1d | 2012-04-18 A | 2012-04-19 A |  |  |  |
| 33 | Revisión de avances | 0.5d | 2012-04-18 A | 2012-04-19 A | 31 |  | Michael Martínez |
| 34 | Asignación de nuevas actividades | 0.5d | 2012-04-18 A | 2012-04-19 A | 33 |  | David Mauricio |
| 35 | Elaboración de Acta de Reunión | 0d | 2012-04-18 A | 2012-04-18 A | 34 |  | Michael Martínez |
| 36 | Firma de acta de reunión | 0d | 2012-04-18 A | 2012-04-18 A | 35 |  | David Mauricio |
| 37 | Envío de Memoria del Proyecto a Gerencia | 1d | 2012-04-19 | 2012-04-19 |  | start no earlier than 2012-04-19 | Michael Martínez |
| 38 | **Construcción** | 13d | 2012-04-05 A | 2012-05-14 A |  |  |  |
| 39 | Envío de Contrato a Software Factory | 0d | 2012-04-05 A | 2012-04-05 A | 26 |  | Michael Martínez |
| 40 | Aprobación de Contrato por Software Factory | 0d | 2012-04-05 A | 2012-04-05 A | 39 |  | Gerente de Software Factory |
| 54 | **Reunión de Asesoría/Cliente** | 0.5d | 2012-05-15 A | 2012-05-15 A |  |  |  |
| 55 | Revisión de avances | 0.5d | 2012-05-15 A | 2012-05-15 A | 53 |  | Michael Martínez |
| 56 | Asignación de nuevas actividades | 0.5d | 2012-05-15 A | 2012-05-15 A | 55 |  | David Mauricio |
| 57 | Elaboración de Acta de Reunión | 0d | 2012-05-15 A | 2012-05-15 A | 56 |  | Michael Martínez |
| 58 | Firma de acuerdo de Acta de Reunión | 0d | 2012-05-15 A | 2012-05-15 A | 57 |  | David Mauricio |
| 59 | **Construcción** | 15.7d | 2012-04-26 A | 2012-06-11 A |  |  |  |
| 60 | Envío de Contrato a Software Factory | 0d | 2012-04-26 A | 2012-04-26 A | 48 |  | Michael Martínez |
| 61 | Aprobación de Contrato por Software Factory | 0d | 2012-04-26 A | 2012-04-26 A | 60 |  | Gerente de Software Factory |
| 82 | **Reunión de Asesoría/Cliente** | 0.5d | 2012-06-12 A | 2012-06-12 A |  |  |  |
| 83 | Revisión de Avances | 0.5d | 2012-06-12 A | 2012-06-12 A | 81 |  | Michael Martínez |
| 84 | Asignación de nuevas actividades | 0.5d | 2012-06-12 A | 2012-06-12 A | 83 |  | David Mauricio |
| 85 | Elaboración de Acta de Reunión | 0d | 2012-06-12 A | 2012-06-12 A | 84 |  | Michael Martínez |
| 86 | Firma de acuerdos de Acta de Reunión | 0d | 2012-06-12 A | 2012-06-12 A | 85 |  | David Mauricio |
| 94 | **Reunión de Asesoría/Cliente** | 1d | 2012-06-19 A | 2012-06-21 A |  |  |  |
| 95 | Revisión de avances | 0.5d | 2012-06-19 A | 2012-06-21 A | 93 |  | Michael Martínez |
| 96 | Asignación de nuevas actividades | 0.5d | 2012-06-21 A | 2012-06-21 A | 95 |  | David Mauricio |
| 97 | Elaboración de Acta de Reunión | 0d | 2012-06-21 A | 2012-06-21 A | 96 |  | Michael Martínez |
| 98 | Firma de acuerdos de Acta de Reunión | 0d | 2012-06-21 A | 2012-06-21 A | 97 |  | David Mauricio |
| 99 | Envío de Memoria del Proyecto a Gerencia | 1d | 2012-06-21 A | 2012-06-21 A |  | start no earlier than 2012-06-21 | Michael Martínez |
| 104 | Envío de Contrato a Software Factory | 0d | 2012-08-13 A | 2012-08-13 A |  | start no earlier than 2012-08-13 | Michael Martínez |
| 105 | Aceptación de Contrato por Software Factory | 0d | 2012-08-13 A | 2012-08-13 A | 104 |  | Gerente de Software Factory |
| 123 | **Reunión de Asesoría/Cliente** | 1d | 2012-08-14 | 2012-08-14 |  |  |  |
| 124 | Presentación de avances | 0.5d | 2012-08-14 | 2012-08-14 |  | start no earlier than 2012-08-14 | Michael Martínez |
| 125 | Asignación de nuevas actividades | 0.5d | 2012-08-14 | 2012-08-14 | 124 | start no earlier than 2012-08-14 | David Mauricio |
| 126 | Elaboración de Acta de Reunión | 0d | 2012-08-14 | 2012-08-14 | 125 | start no earlier than 2012-08-14 | Michael Martínez |
| 127 | Firma de acuerdos de Acta de Reunión | 0d | 2012-08-14 | 2012-08-14 | 126 | start no earlier than 2012-08-14 | David Mauricio |
| 128 | Envío de Memoria del Proyecto a Gerencia | 0.5d | 2012-09-17 | 2012-09-17 |  | start no earlier than 2012-09-17 | Michael Martínez |
| 129 | Envío de Paper del Proyecto a Gerencia | 0.5d | 2012-09-17 | 2012-09-17 |  | start no earlier than 2012-09-17 | Michael Martínez |
| 130 | **Construcción** | 10d | 2012-09-17 | 2012-10-15 |  |  |  |
| 131 | Envío de Contrato a Software Factory | 0d | 2012-09-17 | 2012-09-17 | 117 | start no earlier than 2012-09-17 | Michael Martínez |
| 132 | Aprobación de Contrato por Software Factory | 0d | 2012-09-17 | 2012-09-17 | 131 |  | Gerente de Software Factory |
| 145 | **Reunión de Asesoría/Cliente** | 1d | 2012-09-20 | 2012-09-20 |  |  |  |
| 146 | Presentación de avances | 0.5d | 2012-09-20 | 2012-09-20 |  | start no earlier than 2012-09-20 | Michael Martínez |
| 147 | Asignación de nuevas actividades | 0.5d | 2012-09-20 | 2012-09-20 | 146 | start no earlier than 2012-08-14 | David Mauricio |
| 148 | Elaboración de Acta de Reunión | 0d | 2012-09-20 | 2012-09-20 | 147 | start no earlier than 2012-08-14 | Michael Martínez |
| 149 | Firma de acuerdos de Acta de Reunión | 0d | 2012-09-20 | 2012-09-20 | 148 | start no earlier than 2012-08-14 | David Mauricio |
| 150 | **Construcción** | 7d | 2012-10-02 | 2012-10-25 |  |  |  |
| 151 | Envío de Contrato a Software Factory | 0d | 2012-10-02 | 2012-10-02 | 138 |  | Michael Martínez |
| 152 | Aprobación de Contrato por Software Factory | 0d | 2012-10-02 | 2012-10-02 | 151 |  | Gerente de Software Factory |
| 154 | **Reunión de Asesoría/Cliente** | 1d | 2012-10-16 | 2012-10-16 |  |  |  |
| 155 | Presentación de avances | 0.5d | 2012-10-16 | 2012-10-16 |  | start no earlier than 2012-10-16 | Michael Martínez |
| 156 | Asignación de nuevas actividades | 0.5d | 2012-10-16 | 2012-10-16 | 155 | start no earlier than 2012-09-18 | David Mauricio |
| 157 | Elaboración de Acta de Reunión | 0d | 2012-10-16 | 2012-10-16 | 156 | start no earlier than 2012-09-18 | Michael Martínez |
| 158 | Firma de acuerdos de Acta de Reunión | 0d | 2012-10-16 | 2012-10-16 | 157 | start no earlier than 2012-09-18 | David Mauricio |
| 162 | Envío de Perfil de Tésis a Gerencia | 0.5d | 2012-11-08 | 2012-11-08 |  | start no earlier than 2012-11-08 | Michael Martínez |
| 163 | Envío de Paper del Proyecto a Gerencia | 0.5d | 2012-11-08 | 2012-11-08 |  | start no earlier than 2012-11-08 | Michael Martínez |
| 164 | **Reunión de Asesoría/Cliente** | 1d | 2012-11-12 | 2012-11-12 |  |  |  |
| 165 | Presentación de avances | 0.5d | 2012-11-12 | 2012-11-12 |  | start no earlier than 2012-11-12 | Michael Martínez |
| 166 | Asignación de nuevas actividades | 0.5d | 2012-11-12 | 2012-11-12 | 165 | start no earlier than 2012-11-12 | David Mauricio |
| 167 | Elaboración de Acta de Reunión | 0d | 2012-11-12 | 2012-11-12 | 166 | start no earlier than 2012-11-12 | Michael Martínez |
| 168 | Firma de acuerdos de Acta de Reunión | 0d | 2012-11-12 | 2012-11-12 | 167 | start no earlier than 2012-11-12 | David Mauricio |
| 171 | **Reunión de Asesoría/Cliente** | 1d | 2012-11-13 | 2012-11-13 |  |  |  |
| 172 | Presentación de avances | 0.5d | 2012-11-13 | 2012-11-13 |  | start no earlier than 2012-11-13 | Michael Martínez |
| 173 | Firma de Criterios de Aceptación del Producto | 0.5d | 2012-11-13 | 2012-11-13 | 172 |  | David Mauricio |
| 174 | Elaboración de Acta de Reunión | 0d | 2012-11-13 | 2012-11-13 | 173 |  | Michael Martínez |
| 175 | Firma de Acta de Reunión | 0d | 2012-11-13 | 2012-11-13 | 174 |  | David Mauricio |
| 178 | Envío de Memoria del Proyecto a Gerencia | 1d | 2012-11-22 | 2012-11-22 | 177 | start no earlier than 2012-11-22 | Michael Martínez |
| 179 | Entrega de Poster del Proyecto | 0d | 2012-12-06 | 2012-12-06 | 178 | start no earlier than 2012-12-06 | Michael Martínez |

Changed:

| ID | Task | Start | Finish | Duration | Complete | Total float | Predecessors | Other |
| --- | --- | --- | --- | --- | --- | --- | --- | --- |
| 1 | **Sistema Inteligente para Pronósticos de Partidos de Fútbol** |  | 2012-11-27 → 2012-12-06 (+9d) | 85d → 90d | 65% → 63% |  |  |  |
| 10 | Creación de User Stories |  |  |  |  |  | 3 → 8 |  |
| 17 | **Construcción** |  | 2012-06-11 A → 2012-04-17 A (-55d) | 30.7d → 11d |  |  |  |  |
| 21 | US001 |  |  |  |  |  | 16 → 19 |  |
| 42 | US002 |  |  |  |  |  | 26 → 40 |  |
| 63 | US008 |  |  |  |  |  | 48 → 61 |  |
| 102 | Presentación Finall del Taller de Proyecto 1 |  |  |  |  |  |  | was named Presentación Parcial del Taller de Proyecto 1 |
| 103 | **Contrucción** |  | 2012-10-25 → 2012-09-20 (-35d) | 28d → 16.2d | 44% → 93% | 14d → 30.8d |  |  |
| 106 | **Sprint 4** |  |  | 15.2d → 16.2d |  | 26.8d → 30.8d |  |  |
| 107 | US034 |  |  |  |  |  | none → 105 |  |
| 133 | **Sprint 5** |  |  |  |  | 0d → 7d | 117 → none |  |
| 134 | US045 |  |  |  |  | 0d → 7d | 117 → 132 |  |
| 153 | Sprint 6 |  |  |  |  | 0d → 7d | 138 → 152 |  |
| 159 | **Entrenamiento** |  | 2012-11-19 → 2012-11-08 (-11d) | 10d → 6d |  | 0d → 7d |  |  |
| 161 | Entrenamiento del Sistema |  | 2012-11-19 → 2012-11-08 (-11d) | 8d → 4d |  | 0d → 7d |  |  |
| 169 | **Pruebas de Sistemas Expertos** | 2012-11-20 → 2012-11-12 (-8d) | 2012-11-20 → 2012-11-12 (-8d) |  |  | 0d → 7d |  |  |
| 170 | Validación y verificación de Sistemas Expertos | 2012-11-20 → 2012-11-12 (-8d) | 2012-11-20 → 2012-11-12 (-8d) |  |  | 0d → 7d |  |  |
| 176 | Lanzamiento de Release 2 | 2012-11-22 → 2012-11-13 (-9d) | 2012-11-22 → 2012-11-13 (-9d) |  |  | 0d → 7d |  |  |
| 177 | Cierre final del Producto | 2012-11-26 → 2012-11-15 (-11d) | 2012-11-26 → 2012-11-15 (-11d) |  |  | 0d → 7d |  |  |
| 180 | Presentación Final del Taller de Proyecto 2 | 2012-11-27 → 2012-12-06 (+9d) | 2012-11-27 → 2012-12-06 (+9d) |  |  |  | 177 → 179 |  |

## Version 29 (saved 2012-09-17)

Note of the change: Se actualizó el cronograma del proyecto.

Last finish stays 2012-12-06. Complete tasks 101 → 110.

Changed:

| ID | Task | Start | Finish | Duration | Complete | Total float |
| --- | --- | --- | --- | --- | --- | --- |
| 1 | **Sistema Inteligente para Pronósticos de Partidos de Fútbol** |  |  |  | 63% → 66% |  |
| 17 | **Construcción** | 2012-03-26 A → 2012-03-22 A (-4d) |  | 11d → 12d |  |  |
| 18 | Envío de Contrato a Software Factory | 2012-03-26 A → 2012-03-22 A (-4d) | 2012-03-26 A → 2012-03-22 A (-4d) |  |  |  |
| 37 | Envío de Memoria del Proyecto a Gerencia | 2012-04-19 A | 2012-04-19 A |  | 0% → 100% | 75d → none |
| 40 | Aprobación de Contrato por Software Factory | 2012-04-05 A → 2012-04-09 A (+4d) | 2012-04-05 A → 2012-04-09 A (+4d) |  |  |  |
| 61 | Aprobación de Contrato por Software Factory | 2012-04-26 A → 2012-04-30 A (+4d) | 2012-04-26 A → 2012-04-30 A (+4d) |  |  |  |
| 105 | Aceptación de Contrato por Software Factory | 2012-08-13 A → 2012-08-16 A (+3d) | 2012-08-13 A → 2012-08-16 A (+3d) |  |  |  |
| 106 | **Sprint 4** | 2012-08-13 A → 2012-08-20 A (+7d) |  | 16.2d → 14.2d |  |  |
| 107 | US034 | 2012-08-13 A → 2012-08-20 A (+7d) | 2012-08-13 A → 2012-08-20 A (+7d) |  |  |  |
| 123 | **Reunión de Asesoría/Cliente** | 2012-08-14 A | 2012-08-14 A |  | 0% → 100% | 45d → none |
| 124 | Presentación de avances | 2012-08-14 A | 2012-08-14 A |  | 0% → 100% | 45d → none |
| 125 | Asignación de nuevas actividades | 2012-08-14 A | 2012-08-14 A |  | 0% → 100% | 45d → none |
| 126 | Elaboración de Acta de Reunión | 2012-08-14 A | 2012-08-14 A |  | 0% → 100% | 45d → none |
| 127 | Firma de acuerdos de Acta de Reunión | 2012-08-14 A | 2012-08-14 A |  | 0% → 100% | 45d → none |
| 128 | Envío de Memoria del Proyecto a Gerencia | 2012-09-17 A | 2012-09-17 A |  | 0% → 100% | 32.5d → none |
| 129 | Envío de Paper del Proyecto a Gerencia | 2012-09-17 A | 2012-09-17 A |  | 0% → 100% | 32.5d → none |
| 130 | **Construcción** | 2012-09-17 → 2012-09-13 A (-4d) |  | 10d → 11d |  | 7d → 23d |
| 131 | Envío de Contrato a Software Factory | 2012-09-17 → 2012-09-13 A (-4d) | 2012-09-17 → 2012-09-13 A (-4d) |  | 0% → 100% | 7d → none |
| 132 | Aprobación de Contrato por Software Factory | 2012-09-17 A | 2012-09-17 A |  | 0% → 100% | 7d → none |

## Version 30 (saved 2012-09-25)

Note of the change: Se actualizó el cronograma de actividades.

Last finish stays 2012-12-06. Complete tasks 110 → 116.

Changed:

| ID | Task | Start | Finish | Complete | Total float |
| --- | --- | --- | --- | --- | --- |
| 1 | **Sistema Inteligente para Pronósticos de Partidos de Fútbol** |  |  | 66% → 72% |  |
| 130 | **Construcción** |  |  | 0% → 44% |  |
| 133 | **Sprint 5** | 2012-09-17 A |  | 0% → 44% | 7d → 23d |
| 134 | US045 | 2012-09-17 A | 2012-09-17 A | 0% → 100% | 7d → none |
| 135 | US055 | 2012-09-18 A |  | 0% → 87% | 7d → 30d |
| 136 | US051 | 2012-09-24 A | 2012-09-24 A | 0% → 100% | 7d → none |
| 137 | US052 | 2012-09-25 A |  | 0% → 68% |  |
| 145 | **Reunión de Asesoría/Cliente** | 2012-09-20 A | 2012-09-20 A | 0% → 100% | 30d → none |
| 146 | Presentación de avances | 2012-09-20 A | 2012-09-20 A | 0% → 100% | 30d → none |
| 147 | Asignación de nuevas actividades | 2012-09-20 A | 2012-09-20 A | 0% → 100% | 30d → none |
| 148 | Elaboración de Acta de Reunión | 2012-09-20 A | 2012-09-20 A | 0% → 100% | 30d → none |
| 149 | Firma de acuerdos de Acta de Reunión | 2012-09-20 A | 2012-09-20 A | 0% → 100% | 30d → none |

## Version 31 (saved 2012-09-27)

Note of the change: Se actualizó el cronograma del proyecto.

Last finish stays 2012-12-06. Complete tasks 116 → 117.

Changed:

| ID | Task | Finish | Complete | Total float |
| --- | --- | --- | --- | --- |
| 130 | **Construcción** |  | 44% → 47% |  |
| 133 | **Sprint 5** |  | 44% → 47% |  |
| 135 | US055 | 2012-09-20 A | 87% → 100% | 30d → none |

## Version 32 (saved 2012-10-03)

Note of the change: Se han añadido nuevas tareas que corresponden a la carga de data al sistema.

Last finish stays 2012-12-06. Complete tasks 117 → 124.

Added:

| ID | Task | Duration | Start | Finish | Predecessors | Constraint | Resources |
| --- | --- | --- | --- | --- | --- | --- | --- |
| 145 | **Carga de Data** | 4d | 2012-09-20 A | 2012-10-01 A |  |  |  |
| 146 | Carga de data para entrenamiento | 4d | 2012-09-20 A | 2012-10-01 A | 122 | start no earlier than 2012-09-18 | Michael Martínez |
| 162 | Seleccionar instancias de prueba | 0.2d | 2012-10-01 A | 2012-10-01 A | 146 |  | Michael Martínez |
| 163 | Normalizar las instancias de prueba | 0.2d | 2012-10-01 A | 2012-10-01 A | 162 |  | Michael Martínez |
| 164 | Probar diversos modelos de predicción | 1d | 2012-10-01 A | 2012-10-02 A | 163 |  | Michael Martínez |
| 166 | **Carga de Data** | 12d | 2012-10-04 A | 2012-11-08 |  |  |  |
| 167 | Carga de data para validación de sistemas inteligentes | 12d | 2012-10-04 A | 2012-11-08 | 165 |  | Michael Martínez |
| 174 | Seleccionar instancias de validación | 0.2d | 2012-11-08 | 2012-11-12 | 167 |  | Michael Martínez |
| 175 | Normalizar las instancias de validación | 0.2d | 2012-11-12 | 2012-11-12 | 174 |  | Michael Martínez |

Removed: 161 Entrenamiento del Sistema

Changed:

| ID | Task | Start | Finish | Duration | Complete | Total float | Predecessors | Other |
| --- | --- | --- | --- | --- | --- | --- | --- | --- |
| 1 | **Sistema Inteligente para Pronósticos de Partidos de Fútbol** |  |  |  | 72% → 74% |  |  |  |
| 103 | **Contrucción** |  | 2012-09-20 A |  | 93% → 100% | 30.8d → none |  |  |
| 106 | **Sprint 4** |  | 2012-09-20 A |  | 93% → 100% | 30.8d → none |  |  |
| 121 | Recepción de observaciones por QA | 2012-09-18 A | 2012-09-18 A |  | 0% → 100% | 30.8d → none |  |  |
| 122 | Corrección de observaciones | 2012-09-18 A | 2012-09-20 A |  | 0% → 100% | 30.8d → none |  |  |
| 152 | **Construcción** |  | 2012-10-25 → 2012-10-04 (-21d) | 7d → 1d |  | 7d → 24d |  |  |
| 155 | Sprint 6 |  | 2012-10-25 → 2012-10-04 (-21d) | 7d → 1d |  | 7d → 24d |  |  |
| 161 | **Entrenamiento** | 2012-10-29 → 2012-10-01 A (-28d) | 2012-11-08 → 2012-10-04 A (-35d) | 6d → 2.7d | 0% → 100% | 7d → none |  |  |
| 165 | Seleccionar mejor modelo de predicción | 2012-10-29 → 2012-10-04 A (-25d) | 2012-10-30 → 2012-10-04 A (-26d) | 2d → 0.2d | 0% → 100% | 7d → none | 155 → 164 | was named Implementación del módulo de entrenamiento |
| 168 | **Reunión de Asesoría/Cliente** |  |  |  |  |  | none → 167 |  |
| 173 | **Validación de Sistemas Inteligentes** | 2012-11-12 → 2012-11-08 (-4d) | 2012-11-12 → 2012-11-19 (+7d) | 1d → 3.4d |  | 7d → 4.7d |  | was named Pruebas de Sistemas Expertos |
| 176 | Validación y verificación de Sistemas Inteligentes |  | 2012-11-12 → 2012-11-19 (+7d) | 1d → 3d |  | 7d → 4.7d | Entrenamiento del Sistema → 175 | was named Validación y verificación de Sistemas Expertos |
| 184 | Lanzamiento de Release 2 | 2012-11-13 → 2012-11-19 (+6d) | 2012-11-13 → 2012-11-20 (+7d) |  |  | 7d → 4.7d |  |  |
| 185 | Cierre final del Producto | 2012-11-15 → 2012-11-20 (+5d) | 2012-11-15 → 2012-11-22 (+7d) |  |  | 7d → 4.7d |  |  |
| 186 | Envío de Memoria del Proyecto a Gerencia |  | 2012-11-22 → 2012-11-26 (+4d) |  |  | 5d → 4.7d |  |  |

## Version 33 (saved 2012-10-05)

Note of the change: Se actualiza la base de datos del sistema con 380 partidos registrados y con sus respectivas incidencias. Se actualiza el fichero .arff con 360 instancias (250 de prueba, 130 de predicción) Se actualiza el avance de algunas tareas del cronograma del proyecto.

Last finish stays 2012-12-06.

Changed:

| ID | Task | Complete |
| --- | --- | --- |
| 1 | **Sistema Inteligente para Pronósticos de Partidos de Fútbol** | 74% → 76% |
| 166 | **Carga de Data** | 9% → 25% |
| 167 | Carga de data para validación de sistemas inteligentes | 9% → 25% |

## Version 34 (saved 2012-10-14)

Note of the change: Se actualizó el estado de avances de las tareas. Se corrigió un problema en el excel.

Last finish stays 2012-12-06. Complete tasks 124 → 125.

Changed:

| ID | Task | Start | Finish | Duration | Complete | Total float | Other |
| --- | --- | --- | --- | --- | --- | --- | --- |
| 1 | **Sistema Inteligente para Pronósticos de Partidos de Fútbol** |  |  |  | 76% → 79% |  |  |
| 130 | **Construcción** |  | 2012-10-15 → 2012-10-18 (+3d) | 11d → 13d | 47% → 78% | 23d → 21d |  |
| 133 | **Sprint 5** |  | 2012-10-15 → 2012-10-18 (+3d) | 10d → 12d | 47% → 78% | 23d → 21d |  |
| 137 | US052 |  | 2012-09-25 → 2012-09-27 (+2d) | 1d → 2d | 68% → 69% | 23d → 27d |  |
| 138 | US054 | 2012-09-27 → 2012-10-01 A (+4d) | 2012-10-02 → 2012-10-15 A (+13d) | 3d → 4d | 0% → 100% | 23d → none |  |
| 139 | Revisión por pares | 2012-10-04 → 2012-10-16 (+12d) | 2012-10-04 → 2012-10-16 (+12d) |  |  | 23d → 21d |  |
| 140 | Ejecución de integración | 2012-10-04 → 2012-10-16 (+12d) | 2012-10-04 → 2012-10-16 (+12d) |  |  | 23d → 21d |  |
| 141 | Envío de Sprint 5 a QA | 2012-10-04 → 2012-10-16 (+12d) | 2012-10-04 → 2012-10-16 (+12d) |  |  | 23d → 21d |  |
| 142 | Recepción de observaciones por QA | 2012-10-04 → 2012-10-16 (+12d) | 2012-10-04 → 2012-10-16 (+12d) |  |  | 23d → 21d |  |
| 143 | Corrección de observaciones | 2012-10-15 → 2012-10-18 (+3d) | 2012-10-15 → 2012-10-18 (+3d) |  |  | 23d → 21d |  |
| 144 | Envío 2 de Sprint 5 a QA | 2012-10-15 → 2012-10-18 (+3d) | 2012-10-15 → 2012-10-18 (+3d) |  |  | 23d → 21d |  |
| 152 | **Construcción** | 2012-10-02 → 2012-10-16 (+14d) | 2012-10-04 → 2012-10-16 (+12d) |  |  | 24d → 22d |  |
| 153 | Envío de Contrato a Software Factory | 2012-10-02 → 2012-10-16 (+14d) | 2012-10-02 → 2012-10-16 (+14d) |  |  | 24d → 22d | constraint none → start no earlier than 2012-10-16 |
| 154 | Aprobación de Contrato por Software Factory | 2012-10-02 → 2012-10-16 (+14d) | 2012-10-02 → 2012-10-16 (+14d) |  |  | 24d → 22d |  |
| 155 | Sprint 6 | 2012-10-04 → 2012-10-16 (+12d) | 2012-10-04 → 2012-10-16 (+12d) |  |  | 24d → 22d |  |
| 166 | **Carga de Data** |  |  |  | 25% → 29% |  |  |
| 167 | Carga de data para validación de sistemas inteligentes |  |  |  | 25% → 29% |  |  |

## Version 35 (saved 2012-10-16)

Note of the change: Se actualizó el Documentos/SISPPAFUT - Historias de Usuario.doc con el responsable de las últimas historias de usuario.

Last finish stays 2012-12-06. Complete tasks 125 → 129.

Added:

| ID | Task | Duration | Start | Finish | Predecessors | Constraint | Resources |
| --- | --- | --- | --- | --- | --- | --- | --- |
| 156 | US038 | 0.34d | 2012-10-22 | 2012-10-22 | 154 | start no earlier than 2012-10-22 | Milagros Cruz |
| 157 | US039 | 0.33d | 2012-10-22 | 2012-10-22 | 156 |  | Milagros Cruz |
| 158 | US040 | 0.33d | 2012-10-22 | 2012-10-22 | 157 |  | Milagros Cruz |
| 159 | Revisión por pares | 1d | 2012-10-23 | 2012-10-23 | 158 |  | Michael Martínez |
| 160 | Ejecución de integración | 0d | 2012-10-23 | 2012-10-23 | 159 |  | Michael Martínez |
| 161 | Envío de Sprint 6 a QA | 0d | 2012-10-23 | 2012-10-23 | 160 |  | Michael Martínez |
| 162 | Envío de observaciones por QA | 0d | 2012-10-23 | 2012-10-23 | 161 |  | Analista QA |
| 163 | Recepción de observaciones de QA | 0d | 2012-10-23 | 2012-10-23 | 162 |  | Michael Martínez |
| 164 | Corrección de Observaciones | 1d | 2012-10-25 | 2012-10-25 | 163 |  | Michael Martínez |
| 165 | Envío 2 de Sprint 6 a QA | 0d | 2012-10-25 | 2012-10-25 | 164 |  | Michael Martínez |
| 166 | Envío de observaciones o cierre por QA | 0d | 2012-10-25 | 2012-10-25 | 165 |  | Analista QA |
| 167 | Recepción de observaciones o cierre de QA | 0d | 2012-10-25 | 2012-10-25 | 166 |  | Michael Martínez |
| 168 | Corrección de Observaciones | 1d | 2012-10-29 | 2012-10-29 | 167 |  | Michael Martínez |
| 169 | Cierre de Sprint 6 | 0d | 2012-10-29 | 2012-10-29 | 168 |  | Michael Martínez |

Changed:

| ID | Task | Start | Finish | Duration | Complete | Total float | Predecessors | Other |
| --- | --- | --- | --- | --- | --- | --- | --- | --- |
| 130 | **Construcción** |  |  |  | 78% → 92% |  |  |  |
| 133 | **Sprint 5** |  |  |  | 78% → 92% |  |  |  |
| 137 | US052 |  | 2012-09-27 A |  | 69% → 100% | 27d → none |  |  |
| 139 | Revisión por pares | 2012-10-16 A | 2012-10-16 A |  | 0% → 100% | 21d → none |  |  |
| 140 | Ejecución de integración | 2012-10-16 A | 2012-10-16 A |  | 0% → 100% | 21d → none |  |  |
| 141 | Envío de Sprint 5 a QA | 2012-10-16 A | 2012-10-16 A |  | 0% → 100% | 21d → none |  |  |
| 152 | **Construcción** | 2012-10-16 → 2012-10-18 (+2d) | 2012-10-16 → 2012-10-29 (+13d) | 1d → 5d |  | 22d → 16d |  |  |
| 153 | Envío de Contrato a Software Factory | 2012-10-16 → 2012-10-18 (+2d) | 2012-10-16 → 2012-10-18 (+2d) |  |  | 22d → 17d |  | constraint start no earlier than 2012-10-16 → start no earlier than 2012-10-18 |
| 154 | Aprobación de Contrato por Software Factory | 2012-10-16 → 2012-10-18 (+2d) | 2012-10-16 → 2012-10-18 (+2d) |  |  | 22d → 17d |  |  |
| 155 | **Sprint 6** | 2012-10-16 → 2012-10-22 (+6d) | 2012-10-16 → 2012-10-29 (+13d) | 1d → 4d |  | 22d → 16d |  |  |
| 170 | **Reunión de Asesoría/Cliente** | 2012-10-16 → 2012-10-30 (+14d) | 2012-10-16 → 2012-10-30 (+14d) |  |  | 22d → 16d |  |  |
| 171 | Presentación de avances | 2012-10-16 → 2012-10-30 (+14d) | 2012-10-16 → 2012-10-30 (+14d) |  |  | 22d → 16d | none → 169 |  |
| 172 | Asignación de nuevas actividades | 2012-10-16 → 2012-10-30 (+14d) | 2012-10-16 → 2012-10-30 (+14d) |  |  | 22d → 16d |  |  |
| 173 | Elaboración de Acta de Reunión | 2012-10-16 → 2012-10-30 (+14d) | 2012-10-16 → 2012-10-30 (+14d) |  |  | 22d → 16d |  |  |
| 174 | Firma de acuerdos de Acta de Reunión | 2012-10-16 → 2012-10-30 (+14d) | 2012-10-16 → 2012-10-30 (+14d) |  |  | 22d → 16d |  |  |
| 180 | **Carga de Data** |  |  |  | 29% → 35% |  |  |  |
| 181 | Carga de data para validación de sistemas inteligentes |  |  |  | 29% → 35% |  |  |  |

## Version 36 (saved 2012-10-20)

Note of the change: Se ha actualizado el avance de tareas del cronograma del proyecto. Se sube el fichero al Sprint 6.

Last finish stays 2012-12-06. Complete tasks 129 → 141.

Added:

| ID | Task | Duration | Start | Finish | Predecessors | Constraint | Resources |
| --- | --- | --- | --- | --- | --- | --- | --- |
| 133 | **Reunión de Asesoría/Cliente** | 1d | 2012-09-08 A | 2012-09-08 A |  |  |  |
| 134 | Presentación de avances | 0.5d | 2012-09-08 A | 2012-09-08 A |  | start no earlier than 2012-09-08 | Michael Martínez |
| 135 | Asignación de nuevas actividades | 0.5d | 2012-09-08 A | 2012-09-08 A | 134 |  | David Mauricio |
| 136 | Elaboración de Acta de Reunión | 0d | 2012-09-08 A | 2012-09-08 A | 135 |  | Michael Martínez |
| 137 | Firma de acuerdos de Acta de Reunión | 0d | 2012-09-08 A | 2012-09-08 A | 136 |  | David Mauricio |
| 138 | **Reunión de Asesoría/Cliente** | 1d | 2012-09-17 A | 2012-09-17 A |  |  |  |
| 139 | Presentación de avances | 0.5d | 2012-09-17 A | 2012-09-17 A | 117 |  | Michael Martínez |
| 140 | Asignación de nuevas actividades | 0.5d | 2012-09-17 A | 2012-09-17 A | 139 |  | David Mauricio |
| 141 | Elaboración de Acta de Reunión | 0d | 2012-09-17 A | 2012-09-17 A | 140 |  | Michael Martínez |
| 142 | Firma de acuerdos de Acta de Reunión | 0d | 2012-09-17 A | 2012-09-17 A | 141 |  | David Mauricio |
| 167 | **Reunión de Asesoría/Cliente** | 1d | 2012-10-20 A | 2012-10-20 A |  |  |  |
| 168 | Presentación de avances | 0.5d | 2012-10-20 A | 2012-10-20 A | 153 | start no earlier than 2012-10-20 | Michael Martínez |
| 169 | Asignación de nuevas actividades | 0.5d | 2012-10-20 A | 2012-10-20 A | 168 |  | David Mauricio |
| 170 | Elaboración de Acta de Reunión | 0d | 2012-10-20 A | 2012-10-20 A | 169 |  | Michael Martínez |
| 171 | Firma de acuerdos de Acta de Reunión | 0d | 2012-10-20 A | 2012-10-20 A | 170 |  | David Mauricio |

Changed:

| ID | Task | Start | Finish | Duration | Total float | Predecessors | Other |
| --- | --- | --- | --- | --- | --- | --- | --- |
| 1 | **Sistema Inteligente para Pronósticos de Partidos de Fútbol** |  |  | 90d → 94d |  |  |  |
| 87 | **Diseño de la Red Neuronal** |  | 2012-06-19 A → 2012-06-14 A (-5d) | 4d → 2.3d |  |  |  |
| 89 | Análisis de los patrones |  |  | 1d → 0.5d |  |  |  |
| 90 | Diseño de la RNA |  | 2012-06-18 A → 2012-06-14 A (-4d) | 1d → 0.3d |  |  |  |
| 91 | Envío de la red neuronal a QA | 2012-06-18 A → 2012-06-14 A (-4d) | 2012-06-18 A → 2012-06-14 A (-4d) |  |  |  |  |
| 92 | Recepción de observaciones por QA | 2012-06-18 A → 2012-06-14 A (-4d) | 2012-06-18 A → 2012-06-14 A (-4d) |  |  |  |  |
| 93 | Corrección de observaciones | 2012-06-18 A → 2012-06-14 A (-4d) | 2012-06-19 A → 2012-06-14 A (-5d) | 1d → 0.5d |  |  |  |
| 94 | **Reunión de Asesoría/Cliente** | 2012-06-19 A → 2012-06-21 A (+2d) |  |  |  |  |  |
| 95 | Revisión de avances | 2012-06-19 A → 2012-06-21 A (+2d) |  |  |  |  | constraint none → finish no earlier than 2012-06-20 |
| 96 | Asignación de nuevas actividades |  |  |  |  |  | constraint none → finish no earlier than 2012-06-20 |
| 103 | **Contrucción** |  |  | 16.2d → 19.2d |  |  |  |
| 106 | **Sprint 4** |  |  | 14.2d → 17.2d |  |  |  |
| 115 | US047 |  | 2012-09-10 A → 2012-09-08 A (-2d) |  |  |  |  |
| 123 | **Reunión de Asesoría/Cliente** | 2012-08-14 A → 2012-08-25 A (+11d) | 2012-08-14 A → 2012-08-25 A (+11d) |  |  |  |  |
| 124 | Presentación de avances | 2012-08-14 A → 2012-08-25 A (+11d) | 2012-08-14 A → 2012-08-25 A (+11d) |  |  |  | constraint start no earlier than 2012-08-14 → finish no earlier than 2012-08-25 |
| 125 | Asignación de nuevas actividades | 2012-08-14 A → 2012-08-25 A (+11d) | 2012-08-14 A → 2012-08-25 A (+11d) |  |  |  | constraint start no earlier than 2012-08-14 → finish no earlier than 2012-08-23 |
| 126 | Elaboración de Acta de Reunión | 2012-08-14 A → 2012-08-25 A (+11d) | 2012-08-14 A → 2012-08-25 A (+11d) |  |  |  |  |
| 127 | Firma de acuerdos de Acta de Reunión | 2012-08-14 A → 2012-08-25 A (+11d) | 2012-08-14 A → 2012-08-25 A (+11d) |  |  |  |  |
| 128 | **Reunión de Asesoría/Cliente** | 2012-09-20 A → 2012-09-01 A (-19d) | 2012-09-20 A → 2012-09-01 A (-19d) |  |  |  |  |
| 129 | Presentación de avances | 2012-09-20 A → 2012-09-01 A (-19d) | 2012-09-20 A → 2012-09-01 A (-19d) |  |  |  | constraint start no earlier than 2012-09-20 → start no earlier than 2012-09-01 |
| 130 | Asignación de nuevas actividades | 2012-09-20 A → 2012-09-01 A (-19d) | 2012-09-20 A → 2012-09-01 A (-19d) |  |  |  | constraint start no earlier than 2012-08-14 → none |
| 131 | Elaboración de Acta de Reunión | 2012-09-20 A → 2012-09-01 A (-19d) | 2012-09-20 A → 2012-09-01 A (-19d) |  |  |  | constraint start no earlier than 2012-08-14 → none |
| 132 | Firma de acuerdos de Acta de Reunión | 2012-09-20 A → 2012-09-01 A (-19d) | 2012-09-20 A → 2012-09-01 A (-19d) |  |  |  | constraint start no earlier than 2012-08-14 → none |
| 172 | **Carga de Data** |  | 2012-11-08 → 2012-11-06 (-2d) |  | 4.7d → 5.7d |  |  |
| 173 | Carga de data para validación de sistemas inteligentes |  | 2012-11-08 → 2012-11-06 (-2d) |  | 4.7d → 5.7d |  |  |
| 174 | **Construcción** |  |  | 5d → 6d |  |  |  |
| 197 | **Reunión de Asesoría/Cliente** |  |  |  |  | 173 → none |  |
| 198 | Presentación de avances |  |  |  |  | none → 173 |  |
| 202 | **Validación de Sistemas Inteligentes** | 2012-11-08 → 2012-11-06 (-2d) | 2012-11-19 → 2012-11-15 (-4d) |  | 4.7d → 5.7d |  |  |
| 203 | Seleccionar instancias de validación | 2012-11-08 → 2012-11-06 (-2d) | 2012-11-12 → 2012-11-08 (-4d) |  | 4.7d → 5.7d |  |  |
| 204 | Normalizar las instancias de validación | 2012-11-12 → 2012-11-08 (-4d) | 2012-11-12 → 2012-11-08 (-4d) |  | 4.7d → 5.7d |  |  |
| 205 | Validación y verificación de Sistemas Inteligentes | 2012-11-12 → 2012-11-08 (-4d) | 2012-11-19 → 2012-11-15 (-4d) |  | 4.7d → 5.7d |  |  |
| 213 | Lanzamiento de Release 2 | 2012-11-19 → 2012-11-15 (-4d) | 2012-11-20 → 2012-11-19 (-1d) |  | 4.7d → 5.7d |  |  |
| 214 | Cierre final del Producto | 2012-11-20 → 2012-11-19 (-1d) | 2012-11-22 → 2012-11-20 (-2d) |  | 4.7d → 5.7d |  |  |
| 215 | Envío de Memoria del Proyecto a Gerencia |  | 2012-11-26 → 2012-11-22 (-4d) |  | 4.7d → 5d |  |  |

## Version 37 (saved 2012-10-23)

Note of the change: Se corrigieron las observaciones del analista de QA. Se actualizaron unos SP´s Se actualizó la base de datos del sistema Se actualizó la base de datos se seguridad Se actualizó el cronograma del proyecto.

Last finish stays 2012-12-06. Complete tasks 141 → 150.

Added:

| ID | Task | Duration | Start | Finish | Predecessors | Resources |
| --- | --- | --- | --- | --- | --- | --- |
| 160 | Envío de observaciones o cierre por QA | 0d | 2012-10-22 | 2012-10-22 | 159 | Analista QA |
| 161 | Recepción de observaciones o cierre por QA | 0d | 2012-10-22 | 2012-10-22 | 160 | Michael Martínez |
| 162 | Corrección de observaciones | 1d | 2012-10-22 | 2012-10-22 | 161 | Michael Martínez |
| 163 | Cierre de Sprint 5 | 0d | 2012-10-22 | 2012-10-22 | 162 | Michael Martínez |

Changed:

| ID | Task | Start | Finish | Duration | Complete | Total float |
| --- | --- | --- | --- | --- | --- | --- |
| 1 | **Sistema Inteligente para Pronósticos de Partidos de Fútbol** |  |  |  | 79% → 81% |  |
| 145 | **Construcción** |  | 2012-10-18 → 2012-10-22 (+4d) | 13d → 15d | 92% → 93% | 22d → 20d |
| 148 | **Sprint 5** |  | 2012-10-18 → 2012-10-22 (+4d) | 12d → 14d | 92% → 93% | 22d → 20d |
| 154 | Revisión por pares |  | 2012-10-16 A → 2012-10-18 A (+2d) | 1d → 2d |  |  |
| 155 | Ejecución de integración | 2012-10-16 A → 2012-10-18 A (+2d) | 2012-10-16 A → 2012-10-18 A (+2d) |  |  |  |
| 156 | Envío de Sprint 5 a QA | 2012-10-16 A → 2012-10-18 A (+2d) | 2012-10-16 A → 2012-10-18 A (+2d) |  |  |  |
| 157 | Recepción de observaciones por QA | 2012-10-16 → 2012-10-20 A (+4d) | 2012-10-16 → 2012-10-20 A (+4d) |  | 0% → 100% | 22d → none |
| 158 | Corrección de observaciones | 2012-10-18 → 2012-10-20 A (+2d) | 2012-10-18 → 2012-10-20 A (+2d) |  | 0% → 100% | 22d → none |
| 159 | Envío 2 de Sprint 5 a QA | 2012-10-18 → 2012-10-22 A (+4d) | 2012-10-18 → 2012-10-22 A (+4d) |  | 0% → 100% | 22d → none |
| 178 | **Construcción** | 2012-10-18 A |  |  | 0% → 50% |  |
| 179 | Envío de Contrato a Software Factory | 2012-10-18 A | 2012-10-18 A |  | 0% → 100% | 18d → none |
| 180 | Aprobación de Contrato por Software Factory | 2012-10-18 A | 2012-10-18 A |  | 0% → 100% | 18d → none |
| 181 | **Sprint 6** | 2012-10-22 A |  |  | 0% → 50% |  |
| 182 | US038 | 2012-10-22 A | 2012-10-22 A |  | 0% → 100% | 16d → none |
| 183 | US039 | 2012-10-22 A | 2012-10-22 A |  | 0% → 100% | 16d → none |
| 184 | US040 | 2012-10-22 A | 2012-10-22 A |  | 0% → 100% | 16d → none |
| 185 | Revisión por pares | 2012-10-23 A | 2012-10-23 A |  | 0% → 100% | 16d → none |

## Version 38 (saved 2012-10-29)

Note of the change: Se actualiza el cronograma del proyecto con nuevos avances. Se actualiza la memoria

Last finish stays 2012-12-06. Complete tasks 150 → 183.

Added:

| ID | Task | Duration | Start | Finish | Predecessors | Constraint | Resources |
| --- | --- | --- | --- | --- | --- | --- | --- |
| 170 | **Reunión con Maestro del sistema** | 1d | 2012-10-05 A | 2012-10-05 A |  |  |  |
| 171 | Presentación de resultados del entrenamiento | 0.5d | 2012-10-05 A | 2012-10-05 A | 168 | start no earlier than 2012-10-05 | Michael Martínez |
| 172 | Opinión del maestro del sistema | 0.5d | 2012-10-05 A | 2012-10-05 A | 171 |  | Maestro del Sistema |
| 173 | Elaboración de Acta de Reunión | 0d | 2012-10-05 A | 2012-10-05 A | 172 |  | Michael Martínez |
| 174 | Firma de Acta de Reunión | 0d | 2012-10-05 A | 2012-10-05 A | 173 |  | Maestro del Sistema |
| 175 | **Reunión con Maestro del sistema** | 1d | 2012-10-06 A | 2012-10-06 A |  |  |  |
| 176 | Presentación de resultados del entrenamiento | 0.5d | 2012-10-06 A | 2012-10-06 A | 168 | start no earlier than 2012-10-06 | Michael Martínez |
| 177 | Opinión del maestro del sistema | 0.5d | 2012-10-06 A | 2012-10-06 A | 176 |  | Maestro del Sistema |
| 178 | Elaboración de Acta de Reunión | 0d | 2012-10-06 A | 2012-10-06 A | 177 |  | Michael Martínez |
| 179 | Firma de Acta de Reunión | 0d | 2012-10-06 A | 2012-10-06 A | 178 |  | Maestro del Sistema |
| 180 | **Reunión con Maestro del sistema** | 0d | 2012-10-12 A | 2012-10-12 A |  |  |  |
| 181 | Presentación de resultados del entrenamiento | 0d | 2012-10-12 A | 2012-10-12 A | 168 | start no earlier than 2012-10-12 | Michael Martínez |
| 182 | Opinión del maestro del sistema | 0d | 2012-10-12 A | 2012-10-12 A | 181 |  | Maestro del Sistema |
| 183 | Elaboración de Acta de Reunión | 0d | 2012-10-12 A | 2012-10-12 A | 182 |  | Michael Martínez |
| 184 | Firma de Acta de Reunión | 0d | 2012-10-12 A | 2012-10-12 A | 183 |  | Maestro del Sistema |
| 185 | **Reunión con Maestro del sistema** | 0d | 2012-10-13 A | 2012-10-13 A |  |  |  |
| 186 | Presentación de resultados del entrenamiento | 0d | 2012-10-13 A | 2012-10-13 A | 168 | start no earlier than 2012-10-13 | Michael Martínez |
| 187 | Opinión del maestro del sistema | 0d | 2012-10-13 A | 2012-10-13 A | 186 |  | Maestro del Sistema |
| 188 | Elaboración de Acta de Reunión | 0d | 2012-10-13 A | 2012-10-13 A | 187 |  | Michael Martínez |
| 189 | Firma de Acta de Reunión | 0d | 2012-10-13 A | 2012-10-13 A | 188 |  | Maestro del Sistema |
| 190 | **Reunión con Maestro del sistema** | 1d | 2012-10-14 A | 2012-10-14 A |  |  |  |
| 191 | Presentación de resultados del entrenamiento | 0.5d | 2012-10-14 A | 2012-10-14 A | 168 | start no earlier than 2012-10-14 | Michael Martínez |
| 192 | Opinión del maestro del sistema | 0.5d | 2012-10-14 A | 2012-10-14 A | 191 |  | Maestro del Sistema |
| 193 | Elaboración de Acta de Reunión | 0d | 2012-10-14 A | 2012-10-14 A | 192 |  | Michael Martínez |
| 194 | Firma de Acta de Reunión | 0d | 2012-10-14 A | 2012-10-14 A | 193 |  | Maestro del Sistema |

Removed: 162 Corrección de observaciones

Changed:

| ID | Task | Start | Finish | Duration | Complete | Total float | Predecessors | Other |
| --- | --- | --- | --- | --- | --- | --- | --- | --- |
| 1 | **Sistema Inteligente para Pronósticos de Partidos de Fútbol** |  |  | 94d → 102d | 81% → 86% |  |  |  |
| 145 | **Construcción** |  | 2012-10-22 A | 15d → 22d | 93% → 100% | 20d → none |  |  |
| 148 | **Sprint 5** |  | 2012-10-22 A | 14d → 21d | 93% → 100% | 20d → none |  |  |
| 160 | Envío de observaciones o cierre por QA | 2012-10-22 A | 2012-10-22 A |  | 0% → 100% | 20d → none |  |  |
| 161 | Recepción de observaciones o cierre por QA | 2012-10-22 A | 2012-10-22 A |  | 0% → 100% | 20d → none |  |  |
| 162 | Cierre de Sprint 5 | 2012-10-22 A | 2012-10-22 A |  | 0% → 100% | 20d → none | Corrección de observaciones → 161 |  |
| 165 | **Entrenamiento** |  | 2012-10-04 A → 2012-10-15 A (+11d) | 2.7d → 11d |  |  |  |  |
| 169 | Seleccionar mejor modelo de predicción | 2012-10-04 A → 2012-10-15 A (+11d) | 2012-10-04 A → 2012-10-15 A (+11d) |  |  |  |  |  |
| 200 | **Carga de Data** |  |  | 12d → 20d | 35% → 52% |  |  |  |
| 201 | Carga de data para validación de sistemas inteligentes |  |  |  | 35% → 52% |  |  |  |
| 202 | **Construcción** |  | 2012-10-29 A |  | 50% → 100% | 16d → none |  |  |
| 205 | **Sprint 6** |  | 2012-10-29 A |  | 50% → 100% | 16d → none |  |  |
| 210 | Ejecución de integración | 2012-10-23 A | 2012-10-23 A |  | 0% → 100% | 16d → none |  |  |
| 211 | Envío de Sprint 6 a QA | 2012-10-23 A | 2012-10-23 A |  | 0% → 100% | 16d → none |  |  |
| 212 | Envío de observaciones por QA | 2012-10-23 A | 2012-10-23 A |  | 0% → 100% | 16d → none |  |  |
| 213 | Recepción de observaciones de QA | 2012-10-23 A | 2012-10-23 A |  | 0% → 100% | 16d → none |  |  |
| 214 | Corrección de Observaciones | 2012-10-25 A | 2012-10-25 A |  | 0% → 100% | 16d → none |  |  |
| 215 | Envío 2 de Sprint 6 a QA | 2012-10-25 A | 2012-10-25 A |  | 0% → 100% | 16d → none |  |  |
| 216 | Envío de observaciones o cierre por QA | 2012-10-25 A | 2012-10-25 A |  | 0% → 100% | 16d → none |  |  |
| 217 | Recepción de observaciones o cierre de QA | 2012-10-25 A | 2012-10-25 A |  | 0% → 100% | 16d → none |  |  |
| 218 | Corrección de Observaciones | 2012-10-29 A | 2012-10-29 A |  | 0% → 100% | 16d → none |  |  |
| 219 | Cierre de Sprint 6 | 2012-10-29 A | 2012-10-29 A |  | 0% → 100% | 16d → none |  |  |
| 242 | Cierre final del Proyecto |  |  |  |  |  |  | was named Cierre final del Producto |

## Version 39 (saved 2012-11-19)

Note of the change: Se ha actualizado el avance de tareas en el cronograma

Last finish stays 2012-12-06. Complete tasks 183 → 208.

Added:

| ID | Task | Duration | Start | Finish | Predecessors | Constraint | Resources |
| --- | --- | --- | --- | --- | --- | --- | --- |
| 225 | Elaboración de Perfil de Tesis | 1d | 2012-11-01 A | 2012-11-01 A |  | start no earlier than 2012-11-01 | Michael Martínez |
| 226 | **Reunión de Asesoría/Cliente** | 1d | 2012-11-03 A | 2012-11-03 A |  |  |  |
| 227 | Presentación de avances y revisión de Perfil de Tesis | 0.5d | 2012-11-03 A | 2012-11-03 A | 225 | start no earlier than 2012-11-03 | Michael Martínez |
| 228 | Asignación de nuevas actividades | 0.5d | 2012-11-03 A | 2012-11-03 A | 227 |  | David Mauricio |
| 229 | Elaboración de Acta de Reunión | 0d | 2012-11-03 A | 2012-11-03 A | 228 |  | Michael Martínez |
| 230 | Firma de acuerdos de Acta de Reunión | 0d | 2012-11-03 A | 2012-11-03 A | 229 |  | David Mauricio |

Changed:

| ID | Task | Start | Finish | Duration | Complete | Total float | Other |
| --- | --- | --- | --- | --- | --- | --- | --- |
| 1 | **Sistema Inteligente para Pronósticos de Partidos de Fútbol** |  |  | 102d → 104d | 86% → 98% |  |  |
| 119 | Ejecución de integración |  |  | 0.2d → 0.1d |  |  |  |
| 165 | **Entrenamiento** |  | 2012-10-15 A → 2012-10-02 A (-13d) | 11d → 1d |  |  |  |
| 166 | Seleccionar instancias de prueba |  |  | 0.2d → 0.1d |  |  |  |
| 167 | Normalizar las instancias de prueba |  |  | 0.2d → 0.1d |  |  |  |
| 168 | Probar diversos modelos de predicción |  | 2012-10-02 A → 2012-10-01 A (-1d) | 1d → 0.3d |  |  |  |
| 169 | Seleccionar mejor modelo de predicción | 2012-10-15 A → 2012-10-02 A (-13d) | 2012-10-15 A → 2012-10-02 A (-13d) |  |  |  |  |
| 200 | **Carga de Data** |  | 2012-11-06 → 2012-11-08 A (+2d) | 20d → 23d | 52% → 100% | 5.7d → none |  |
| 201 | Carga de data para validación de sistemas inteligentes |  | 2012-11-06 → 2012-11-08 A (+2d) | 12d → 15d | 52% → 100% | 5.7d → none | constraint none → finish no earlier than 2012-11-08 |
| 220 | **Reunión de Asesoría/Cliente** | 2012-10-30 A | 2012-10-30 A |  | 0% → 100% | 16d → none |  |
| 221 | Presentación de avances | 2012-10-30 A | 2012-10-30 A |  | 0% → 100% | 16d → none |  |
| 222 | Asignación de nuevas actividades | 2012-10-30 A | 2012-10-30 A |  | 0% → 100% | 16d → none |  |
| 223 | Elaboración de Acta de Reunión | 2012-10-30 A | 2012-10-30 A |  | 0% → 100% | 16d → none |  |
| 224 | Firma de acuerdos de Acta de Reunión | 2012-10-30 A | 2012-10-30 A |  | 0% → 100% | 16d → none |  |
| 231 | **Reunión de Asesoría/Cliente** | 2012-11-12 → 2012-11-10 A (-2d) | 2012-11-12 A | 1d → 1.5d | 0% → 100% | 11d → none |  |
| 232 | Presentación de avances | 2012-11-12 → 2012-11-10 A (-2d) | 2012-11-12 → 2012-11-10 A (-2d) |  | 0% → 100% | 11d → none | constraint start no earlier than 2012-11-12 → start no earlier than 2012-11-10 |
| 233 | Asignación de nuevas actividades | 2012-11-12 A | 2012-11-12 A |  | 0% → 100% | 11d → none |  |
| 234 | Elaboración de Acta de Reunión | 2012-11-12 A | 2012-11-12 A |  | 0% → 100% | 11d → none |  |
| 235 | Firma de acuerdos de Acta de Reunión | 2012-11-12 A | 2012-11-12 A |  | 0% → 100% | 11d → none |  |
| 236 | **Validación de Sistemas Inteligentes** | 2012-11-06 → 2012-11-10 A (+4d) | 2012-11-15 A |  | 0% → 100% | 5.7d → none |  |
| 237 | Seleccionar instancias de validación | 2012-11-06 → 2012-11-10 A (+4d) | 2012-11-08 → 2012-11-10 A (+2d) |  | 0% → 100% | 5.7d → none |  |
| 238 | Normalizar las instancias de validación | 2012-11-08 → 2012-11-10 A (+2d) | 2012-11-08 → 2012-11-10 A (+2d) |  | 0% → 100% | 5.7d → none |  |
| 239 | Validación y verificación de Sistemas Inteligentes | 2012-11-08 → 2012-11-10 A (+2d) | 2012-11-15 A |  | 0% → 100% | 5.7d → none |  |
| 240 | Envío de Perfil de Tésis a Gerencia | 2012-11-08 → 2012-11-15 A (+7d) | 2012-11-08 → 2012-11-15 A (+7d) |  | 0% → 100% | 12.5d → none | constraint start no earlier than 2012-11-08 → start no earlier than 2012-11-15 |
| 241 | Envío de Paper del Proyecto a Gerencia | 2012-11-08 → 2012-11-15 A (+7d) | 2012-11-08 → 2012-11-15 A (+7d) |  | 0% → 100% | 12.5d → none | constraint start no earlier than 2012-11-08 → start no earlier than 2012-11-15 |
| 242 | **Reunión de Asesoría/Cliente** | 2012-11-13 A | 2012-11-13 A |  | 0% → 100% | 10d → none |  |
| 243 | Presentación de avances | 2012-11-13 A | 2012-11-13 A |  | 0% → 100% | 10d → none |  |
| 244 | Firma de Criterios de Aceptación del Producto | 2012-11-13 A | 2012-11-13 A |  | 0% → 100% | 10d → none |  |
| 245 | Elaboración de Acta de Reunión | 2012-11-13 A | 2012-11-13 A |  | 0% → 100% | 10d → none |  |
| 246 | Firma de Acta de Reunión | 2012-11-13 A | 2012-11-13 A |  | 0% → 100% | 10d → none |  |
| 247 | Lanzamiento de Release 2 | 2012-11-15 A | 2012-11-19 A |  | 0% → 100% | 5.7d → none |  |
| 248 | Cierre final del Proyecto | 2012-11-19 A | 2012-11-20 A |  | 0% → 100% | 5.7d → none |  |

## Version 40 (saved 2012-11-21)

Note of the change: Se actualizó el cronograma

Last finish stays 2012-12-06. Complete tasks 208 → 209.

Changed:

| ID | Task | Start | Finish | Complete | Total float |
| --- | --- | --- | --- | --- | --- |
| 1 | **Sistema Inteligente para Pronósticos de Partidos de Fútbol** |  |  | 98% → 99% |  |
| 249 | Envío de Memoria del Proyecto a Gerencia | 2012-11-22 A | 2012-11-22 A | 0% → 100% | 5d → none |

## Version 41 (saved 2012-12-05)

Note of the change: Ultimos cambios

Last finish stays 2012-12-06. Complete tasks 209 → 211.

Changed:

| ID | Task | Start | Finish | Complete | Total float |
| --- | --- | --- | --- | --- | --- |
| 1 | **Sistema Inteligente para Pronósticos de Partidos de Fútbol** |  | 2012-12-06 A | 99% → 100% | 0d → none |
| 250 | Entrega de Poster del Proyecto | 2012-12-06 A | 2012-12-06 A | 0% → 100% | 0d → none |
| 251 | Presentación Final del Taller de Proyecto 2 | 2012-12-06 A | 2012-12-06 A | 0% → 100% | 0d → none |
